# Planificación temporal

How a schedule from MS Project changed from version to version. A marks actual dates.

## Version 1 (saved 2021-05-07, file Planificación temporal(1).mpp)

Note of the change: Año3

| ID | WBS | Task | Duration | Start | Finish | Predecessors | Total float |
| --- | --- | --- | --- | --- | --- | --- | --- |
| 1 | 1 | **Game Discovery** | 13.25d | 2021-05-07 09:00 | 2021-05-26 11:00 |  | 0d |
| 2 | 1.1 | **Fase de Análisis** | 2.88d | 2021-05-07 09:00 | 2021-05-11 18:00 |  | 0d |
| 3 | 1.1.1 | **Declaración de alcance** | 2.38d | 2021-05-07 09:00 | 2021-05-11 12:00 |  | 0d |
| 4 |  | DAFO | 5h | 2021-05-07 09:00 | 2021-05-07 16:00 |  | 0d |
| 5 |  | Planificación económica | 4h | 2021-05-10 18:00 | 2021-05-11 12:00 | 7 | 10.88d |
| 6 |  | Priorización de objetivos | 3h | 2021-05-07 16:00 | 2021-05-07 19:00 | 4 | 12.25d |
| 7 |  | Planificación de tiempos | 3h | 2021-05-10 15:00 | 2021-05-10 18:00 | 10 | 10.88d |
| 8 | 1.1.2 | **Análisis de requisitos** | 1.62d | 2021-05-07 16:00 | 2021-05-11 11:00 |  | 0d |
| 9 |  | Identificación de RF y RNF | 4h | 2021-05-07 16:00 | 2021-05-10 10:00 | 4 | 0d |
| 10 |  | Priorización de RF | 3h | 2021-05-10 10:00 | 2021-05-10 13:00 | 9 | 0d |
| 11 |  | Análisis de arquitectura | 5h | 2021-05-10 10:00 | 2021-05-10 17:00 | 9 | 11.5d |
| 12 |  | Realización de diagramas de casos de uso | 6h | 2021-05-10 15:00 | 2021-05-11 11:00 | 10 | 0d |
| 13 | 1.1.3 | **Validación** | 1.38d | 2021-05-10 15:00 | 2021-05-11 18:00 |  | 0.75d |
| 14 |  | Definición de la validación RF | 4h | 2021-05-10 15:00 | 2021-05-10 19:00 | 10 | 11.25d |
| 15 |  | Definición de la integración | 4h | 2021-05-11 11:00 | 2021-05-11 17:00 | 12 | 10.5d |
| 16 |  | Definición de medidas de aseguramiento de la calidad | 5h | 2021-05-11 11:00 | 2021-05-11 18:00 | 12 | 0d |
| 17 |  | Definición de la validación de la arquitectura | 4h | 2021-05-11 11:00 | 2021-05-11 17:00 | 12 | 0.12d |
| 18 |  | Definición de la migración | 5h | 2021-05-11 11:00 | 2021-05-11 18:00 | 12 | 10.38d |
| 19 | 1.2 | **Fase de Diseño** | 4d | 2021-05-11 18:00 | 2021-05-17 18:00 |  | 0d |
| 20 | 1.2.1 | **Diseño de la IU** | 1.25d | 2021-05-11 18:00 | 2021-05-13 10:00 |  | 0d |
| 21 |  | Interfaz de la app de técnicos | 2h | 2021-05-11 18:00 | 2021-05-12 10:00 | 16, 17 | 0.38d |
| 22 |  | Interfaz de la app de usuarios | 5h | 2021-05-11 18:00 | 2021-05-12 13:00 | 16, 17 | 0d |
| 23 |  | Interfaz de la página web | 5h | 2021-05-12 15:00 | 2021-05-13 10:00 | 21, 22 | 0d |
| 24 | 1.2.2 | **Diseño de los módulos** | 2.25d | 2021-05-13 10:00 | 2021-05-17 12:00 |  | 6.88d |
| 25 |  | Diseño del módulo de inversores | 9h | 2021-05-13 10:00 | 2021-05-14 11:00 | 21, 23 | 6.88d |
| 26 |  | Diseño del módulo de clientes | 9h | 2021-05-14 11:00 | 2021-05-17 12:00 | 25 | 6.88d |
| 27 | 1.2.3 | **Diseño de la arquitectura** | 1.88d | 2021-05-12 10:00 | 2021-05-13 19:00 |  | 1d |
| 28 |  | Lógica del módulo de técnicos | 2h | 2021-05-12 10:00 | 2021-05-12 12:00 | 21 | 2.75d |
| 29 |  | Lógica del módulo de usuarios | 7h | 2021-05-12 15:00 | 2021-05-13 12:00 | 22 | 0.62d |
| 30 |  | Lógica de la página web | 7h | 2021-05-13 10:00 | 2021-05-13 19:00 | 23 | 0d |
| 31 | 1.2.4 | **Diseño de bases de datos** | 1.88d | 2021-05-14 09:00 | 2021-05-17 18:00 |  | 2.25d |
| 32 |  | Seguridad | 5h | 2021-05-14 09:00 | 2021-05-14 16:00 | 27 | 2.25d |
| 33 |  | Diseño de permisos | 5h | 2021-05-14 16:00 | 2021-05-17 11:00 | 32 | 4d |
| 34 |  | Diseño de datos | 5h | 2021-05-17 11:00 | 2021-05-17 18:00 | 33 | 4d |
| 35 | 1.3 | **Fase de Implementación** | 5.75d | 2021-05-12 10:00 | 2021-05-19 18:00 |  | 1.88d |
| 36 | 1.3.1 | **Módulos** | 2d | 2021-05-17 18:00 | 2021-05-19 18:00 |  | 4d |
| 37 |  | Implementación del módulo de inversores | 16h | 2021-05-17 18:00 | 2021-05-19 18:00 | 34 | 4d |
| 38 |  | Implementación del módulo de gestión | 16h | 2021-05-17 18:00 | 2021-05-19 18:00 | 34 | 4d |
| 39 | 1.3.2 | **Implementación de base de datos** | 1.62d | 2021-05-14 16:00 | 2021-05-18 11:00 |  | 2.25d |
| 40 |  | Seguridad | 8h | 2021-05-14 16:00 | 2021-05-17 16:00 | 32 | 2.25d |
| 41 |  | Implementación de permisos | 8h | 2021-05-17 11:00 | 2021-05-18 11:00 | 33 | 5.38d |
| 42 | 1.3.3 | **Implementación de la IU** | 2.62d | 2021-05-12 10:00 | 2021-05-14 17:00 |  | 7.12d |
| 43 |  | Interfaz de app para técnicos | 5h | 2021-05-12 10:00 | 2021-05-12 17:00 | 21 | 9.12d |
| 44 |  | Interfaz de app para clientes | 13h | 2021-05-12 15:00 | 2021-05-14 10:00 | 22 | 7.75d |
| 45 |  | Interfaz de página web | 13h | 2021-05-13 10:00 | 2021-05-14 17:00 | 23 | 7.12d |
| 46 | 1.3.4 | **Implementación de la arquitectura** | 3.88d | 2021-05-12 12:00 | 2021-05-18 11:00 |  | 0d |
| 47 |  | Lógica de app para técnicos | 9h | 2021-05-12 12:00 | 2021-05-13 13:00 | 28 | 2.75d |
| 48 |  | Lógica de app para clientes | 18h | 2021-05-13 12:00 | 2021-05-17 16:00 | 29 | 0.62d |
| 49 |  | Lógica de página web | 18h | 2021-05-14 09:00 | 2021-05-18 11:00 | 30 | 0d |
| 50 | 1.4 | **Fase de validación y pruebas** | 5.88d | 2021-05-17 16:00 | 2021-05-25 13:00 |  | 0.62d |
| 51 | 1.4.1 | **Casos de prueba** | 0.75d | 2021-05-18 11:00 | 2021-05-18 19:00 |  | 0d |
| 52 |  | Diseño de datos de entrada | 3h | 2021-05-18 11:00 | 2021-05-18 16:00 | 46 | 0d |
| 53 |  | Introducción de datos en la base de datos | 2h | 2021-05-18 11:00 | 2021-05-18 13:00 | 39 | 5.38d |
| 54 |  | Validar consistencia de datos | 3h | 2021-05-18 16:00 | 2021-05-18 19:00 | 53, 52 | 5.25d |
| 55 | 1.4.2 | **Datos de prueba** | 0.5d | 2021-05-18 16:00 | 2021-05-19 10:00 |  | 0d |
| 56 |  | Datos de entrada | 2h | 2021-05-18 16:00 | 2021-05-18 18:00 | 52 | 0d |
| 57 |  | Datos de salida | 2h | 2021-05-18 18:00 | 2021-05-19 10:00 | 56 | 0d |
| 58 | 1.4.3 | **Pruebas unitarias** | 4d | 2021-05-17 16:00 | 2021-05-21 16:00 |  | 0d |
| 59 |  | Pruebas de arquitectura | 14h | 2021-05-18 11:00 | 2021-05-19 19:00 | 46 | 0.38d |
| 60 |  | Pruebas de aceptación | 10h | 2021-05-19 10:00 | 2021-05-20 12:00 | 55 | 0d |
| 61 |  | Pruebas de seguridad | 14h | 2021-05-17 16:00 | 2021-05-19 12:00 | 40 | 2.25d |
| 62 |  | Pruebas de integración software | 10h | 2021-05-20 12:00 | 2021-05-21 16:00 | 59, 60 | 0d |
| 63 | 1.4.4 | **Tratamiento de errores** | 1.88d | 2021-05-21 16:00 | 2021-05-25 13:00 |  | 0d |
| 64 |  | Corrección de errores | 13h | 2021-05-21 16:00 | 2021-05-25 11:00 | 57, 58 | 0d |
| 65 |  | Informe de errores | 2h | 2021-05-25 11:00 | 2021-05-25 13:00 | 64 | 0d |
| 66 | 1.5 | **Fase de Despliegue** | 10.12d | 2021-05-12 10:00 | 2021-05-26 11:00 |  | 0d |
| 67 | 1.5.1 | **Diseño de Descriptores** | 4.12d | 2021-05-19 18:00 | 2021-05-25 19:00 |  | 0.25d |
| 68 |  | Descripción de servicio | 3h | 2021-05-19 18:00 | 2021-05-20 11:00 | 35 | 4d |
| 69 |  | Analisis de técnicas para el lanzamiento | 2h | 2021-05-25 15:00 | 2021-05-25 17:00 | 65 | 0d |
| 70 |  | Descripción de despliege | 2h | 2021-05-25 17:00 | 2021-05-25 19:00 | 69 | 0d |

| ID | WBS | Task | Duration | Start | Finish | Predecessors | Total float |
| --- | --- | --- | --- | --- | --- | --- | --- |
| 71 | 1.5.2 | **Formación** | 10.12d | 2021-05-12 10:00 | 2021-05-26 11:00 |  | 0d |
| 72 |  | Redacción de guía para usuarios | 3h | 2021-05-12 10:00 | 2021-05-12 13:00 | 21 | 9.5d |
| 73 |  | Redacción de guía para técnicos | 4h | 2021-05-12 15:00 | 2021-05-12 19:00 | 22 | 9d |
| 74 |  | Impartir cursos para usuarios y técnicos | 2h | 2021-05-13 09:00 | 2021-05-13 11:00 | 72, 73 | 9d |
| 75 |  | Evaluación del grado de aceptacion del producto | 2h | 2021-05-26 09:00 | 2021-05-26 11:00 | 70 | 0d |

## Version 2 (saved 2021-05-10, file Planificación temporal.mpp)

Note of the change: Año3

Last finish 2021-05-26 → 2021-05-28 (+2d).

Changed:

| ID | Task | Start | Finish | Duration | Total float | Predecessors |
| --- | --- | --- | --- | --- | --- | --- |
| 1 | **Game Discovery** |  | 2021-05-26 11:00 → 2021-05-28 17:00 (+2d) | 13.25d → 16.8d |  |  |
| 2 | **Fase de Análisis** |  | 2021-05-11 18:00 → 2021-05-14 10:00 (+3d) | 2.88d → 5.47d |  |  |
| 3 | **Declaración de alcance** |  | 2021-05-11 12:00 → 2021-05-10 12:00 (-1d) | 2.38d → 1.47d |  |  |
| 5 | Planificación económica | 2021-05-10 18:00 → 2021-05-07 16:00 (-3d) | 2021-05-11 12:00 → 2021-05-10 10:00 (-1d) |  | 10.88d → 15.6d | 7 → 4 |
| 7 | Planificación de tiempos | 2021-05-10 15:00 → 2021-05-10 09:00 | 2021-05-10 18:00 → 2021-05-10 12:00 |  | 10.88d → 15.33d | 10 → 6 |
| 8 | **Análisis de requisitos** |  | 2021-05-11 11:00 → 2021-05-11 18:00 | 1.62d → 2.4d |  |  |
| 11 | Análisis de arquitectura | 2021-05-10 10:00 → 2021-05-10 15:00 | 2021-05-10 17:00 → 2021-05-11 10:00 (+1d) |  | 11.5d → 0d | 9 → 10 |
| 12 | Realización de diagramas de casos de uso | 2021-05-10 15:00 → 2021-05-11 10:00 (+1d) | 2021-05-11 11:00 → 2021-05-11 18:00 |  |  | 10 → 11 |
| 13 | **Validación** |  | 2021-05-11 18:00 → 2021-05-14 10:00 (+3d) | 1.38d → 3.87d | 0.75d → 1.47d |  |
| 15 | Definición de la integración | 2021-05-11 11:00 → 2021-05-11 18:00 | 2021-05-11 17:00 → 2021-05-12 12:00 (+1d) |  | 10.5d → 0d |  |
| 16 | Definición de medidas de aseguramiento de la calidad | 2021-05-11 11:00 → 2021-05-12 12:00 (+1d) | 2021-05-11 18:00 → 2021-05-12 19:00 (+1d) |  |  | 12 → 15 |
| 17 | Definición de la validación de la arquitectura | 2021-05-11 11:00 → 2021-05-13 09:00 (+2d) | 2021-05-11 17:00 → 2021-05-13 13:00 (+2d) |  | 0.12d → 0d | 12 → 16 |
| 18 | Definición de la migración | 2021-05-11 11:00 → 2021-05-13 15:00 (+2d) | 2021-05-11 18:00 → 2021-05-14 10:00 (+3d) |  | 10.38d → 11.33d | 12 → 17 |
| 19 | **Fase de Diseño** | 2021-05-11 18:00 → 2021-05-13 15:00 (+2d) | 2021-05-17 18:00 → 2021-05-19 13:00 (+2d) | 4d → 4.27d |  |  |
| 20 | **Diseño de la IU** | 2021-05-11 18:00 → 2021-05-13 15:00 (+2d) | 2021-05-13 10:00 → 2021-05-14 17:00 (+1d) | 1.25d → 1.33d |  |  |
| 21 | Interfaz de la app de técnicos | 2021-05-11 18:00 → 2021-05-13 15:00 (+2d) | 2021-05-12 10:00 → 2021-05-13 17:00 (+1d) |  | 0.38d → 0.4d |  |
| 22 | Interfaz de la app de usuarios | 2021-05-11 18:00 → 2021-05-13 15:00 (+2d) | 2021-05-12 13:00 → 2021-05-14 10:00 (+2d) |  |  |  |
| 23 | Interfaz de la página web | 2021-05-12 15:00 → 2021-05-14 10:00 (+2d) | 2021-05-13 10:00 → 2021-05-14 17:00 (+1d) |  |  |  |
| 24 | **Diseño de los módulos** | 2021-05-13 10:00 → 2021-05-14 17:00 (+1d) | 2021-05-17 12:00 → 2021-05-18 19:00 (+1d) | 2.25d → 2.4d | 6.88d → 8.27d |  |
| 25 | Diseño del módulo de inversores | 2021-05-13 10:00 → 2021-05-14 17:00 (+1d) | 2021-05-14 11:00 → 2021-05-17 18:00 (+3d) |  | 6.88d → 8.27d |  |
| 26 | Diseño del módulo de clientes | 2021-05-14 11:00 → 2021-05-17 18:00 (+3d) | 2021-05-17 12:00 → 2021-05-18 19:00 (+1d) |  | 6.88d → 8.27d |  |
| 27 | **Diseño de la arquitectura** | 2021-05-12 10:00 → 2021-05-13 17:00 (+1d) | 2021-05-13 19:00 → 2021-05-17 16:00 (+4d) | 1.88d → 2d | 1d → 1.07d |  |
| 28 | Lógica del módulo de técnicos | 2021-05-12 10:00 → 2021-05-13 17:00 (+1d) | 2021-05-12 12:00 → 2021-05-13 19:00 (+1d) |  | 2.75d → 2.93d |  |
| 29 | Lógica del módulo de usuarios | 2021-05-12 15:00 → 2021-05-14 10:00 (+2d) | 2021-05-13 12:00 → 2021-05-14 19:00 (+1d) |  | 0.62d → 0.67d |  |
| 30 | Lógica de la página web | 2021-05-13 10:00 → 2021-05-14 17:00 (+1d) | 2021-05-13 19:00 → 2021-05-17 16:00 (+4d) |  |  |  |
| 31 | **Diseño de bases de datos** | 2021-05-14 09:00 → 2021-05-17 16:00 (+3d) | 2021-05-17 18:00 → 2021-05-19 13:00 (+2d) | 1.88d → 2d | 2.25d → 3.33d |  |
| 32 | Seguridad | 2021-05-14 09:00 → 2021-05-17 16:00 (+3d) | 2021-05-14 16:00 → 2021-05-18 11:00 (+4d) |  | 2.25d → 3.33d |  |
| 33 | Diseño de permisos | 2021-05-14 16:00 → 2021-05-18 11:00 (+4d) | 2021-05-17 11:00 → 2021-05-18 18:00 (+1d) |  | 4d → 5.6d |  |
| 34 | Diseño de datos | 2021-05-17 11:00 → 2021-05-18 18:00 (+1d) | 2021-05-17 18:00 → 2021-05-19 13:00 (+2d) |  | 4d → 5.6d |  |
| 35 | **Fase de Implementación** | 2021-05-12 10:00 → 2021-05-13 17:00 (+1d) | 2021-05-19 18:00 → 2021-05-21 13:00 (+2d) | 5.75d → 6.13d | 1.88d → 2d |  |
| 36 | **Módulos** | 2021-05-17 18:00 → 2021-05-19 15:00 (+2d) | 2021-05-19 18:00 → 2021-05-21 13:00 (+2d) | 2d → 2.13d | 4d → 5.6d |  |
| 37 | Implementación del módulo de inversores | 2021-05-17 18:00 → 2021-05-19 15:00 (+2d) | 2021-05-19 18:00 → 2021-05-21 13:00 (+2d) |  | 4d → 5.6d |  |
| 38 | Implementación del módulo de gestión | 2021-05-17 18:00 → 2021-05-19 15:00 (+2d) | 2021-05-19 18:00 → 2021-05-21 13:00 (+2d) |  | 4d → 5.6d |  |
| 39 | **Implementación de base de datos** | 2021-05-14 16:00 → 2021-05-18 11:00 (+4d) | 2021-05-18 11:00 → 2021-05-19 18:00 (+1d) | 1.62d → 1.73d | 2.25d → 3.33d |  |
| 40 | Seguridad | 2021-05-14 16:00 → 2021-05-18 11:00 (+4d) | 2021-05-17 16:00 → 2021-05-19 11:00 (+2d) |  | 2.25d → 3.33d |  |
| 41 | Implementación de permisos | 2021-05-17 11:00 → 2021-05-18 18:00 (+1d) | 2021-05-18 11:00 → 2021-05-19 18:00 (+1d) |  | 5.38d → 6.67d |  |
| 42 | **Implementación de la IU** | 2021-05-12 10:00 → 2021-05-13 17:00 (+1d) | 2021-05-14 17:00 → 2021-05-18 12:00 (+4d) | 2.62d → 2.8d | 7.12d → 8.93d |  |
| 43 | Interfaz de app para técnicos | 2021-05-12 10:00 → 2021-05-13 17:00 (+1d) | 2021-05-12 17:00 → 2021-05-14 12:00 (+2d) |  | 9.12d → 11.07d |  |
| 44 | Interfaz de app para clientes | 2021-05-12 15:00 → 2021-05-14 10:00 (+2d) | 2021-05-14 10:00 → 2021-05-17 17:00 (+3d) |  | 7.75d → 9.6d |  |
| 45 | Interfaz de página web | 2021-05-13 10:00 → 2021-05-14 17:00 (+1d) | 2021-05-14 17:00 → 2021-05-18 12:00 (+4d) |  | 7.12d → 8.93d |  |
| 46 | **Implementación de la arquitectura** | 2021-05-12 12:00 → 2021-05-14 09:00 (+2d) | 2021-05-18 11:00 → 2021-05-19 18:00 (+1d) | 3.88d → 4.13d |  |  |
| 47 | Lógica de app para técnicos | 2021-05-12 12:00 → 2021-05-14 09:00 (+2d) | 2021-05-13 13:00 → 2021-05-17 10:00 (+4d) |  | 2.75d → 2.93d |  |
| 48 | Lógica de app para clientes | 2021-05-13 12:00 → 2021-05-17 09:00 (+4d) | 2021-05-17 16:00 → 2021-05-19 11:00 (+2d) |  | 0.62d → 0.67d |  |
| 49 | Lógica de página web | 2021-05-14 09:00 → 2021-05-17 16:00 (+3d) | 2021-05-18 11:00 → 2021-05-19 18:00 (+1d) |  |  |  |
| 50 | **Fase de validación y pruebas** | 2021-05-17 16:00 → 2021-05-19 11:00 (+2d) | 2021-05-25 13:00 → 2021-05-27 19:00 (+2d) | 5.88d → 7.2d | 0.62d → 0.67d |  |
| 51 | **Casos de prueba** | 2021-05-18 11:00 → 2021-05-19 18:00 (+1d) | 2021-05-18 19:00 → 2021-05-20 16:00 (+2d) | 0.75d → 0.8d | 0d → 3.6d |  |
| 52 | Diseño de datos de entrada | 2021-05-18 11:00 → 2021-05-19 18:00 (+1d) | 2021-05-18 16:00 → 2021-05-20 11:00 (+2d) |  | 0d → 3.6d |  |
| 53 | Introducción de datos en la base de datos | 2021-05-18 11:00 → 2021-05-19 18:00 (+1d) | 2021-05-18 13:00 → 2021-05-20 10:00 (+2d) |  | 5.38d → 6.67d |  |
| 54 | Validar consistencia de datos | 2021-05-18 16:00 → 2021-05-20 11:00 (+2d) | 2021-05-18 19:00 → 2021-05-20 16:00 (+2d) |  | 5.25d → 6.53d |  |
| 55 | **Datos de prueba** | 2021-05-18 16:00 → 2021-05-20 11:00 (+2d) | 2021-05-19 10:00 → 2021-05-20 17:00 (+1d) | 0.5d → 0.53d | 0d → 3.6d |  |
| 56 | Datos de entrada | 2021-05-18 16:00 → 2021-05-20 11:00 (+2d) | 2021-05-18 18:00 → 2021-05-20 13:00 (+2d) |  | 0d → 3.6d |  |
| 57 | Datos de salida | 2021-05-18 18:00 → 2021-05-20 15:00 (+2d) | 2021-05-19 10:00 → 2021-05-20 17:00 (+1d) |  | 0d → 3.6d |  |
| 58 | **Pruebas unitarias** | 2021-05-17 16:00 → 2021-05-19 11:00 (+2d) | 2021-05-21 16:00 → 2021-05-26 10:00 (+5d) | 4d → 5.2d |  |  |
| 59 | Pruebas de arquitectura | 2021-05-18 11:00 → 2021-05-19 18:00 (+1d) | 2021-05-19 19:00 → 2021-05-21 16:00 (+2d) |  | 0.38d → 0d |  |
| 60 | Pruebas de aceptación | 2021-05-19 10:00 → 2021-05-21 16:00 (+2d) | 2021-05-20 12:00 → 2021-05-24 18:00 (+4d) |  |  | 55 → 59 |
| 61 | Pruebas de seguridad | 2021-05-17 16:00 → 2021-05-19 11:00 (+2d) | 2021-05-19 12:00 → 2021-05-20 19:00 (+1d) |  | 2.25d → 3.33d |  |
| 62 | Pruebas de integración software | 2021-05-20 12:00 → 2021-05-24 18:00 (+4d) | 2021-05-21 16:00 → 2021-05-26 10:00 (+5d) |  |  |  |
| 63 | **Tratamiento de errores** | 2021-05-21 16:00 → 2021-05-26 10:00 (+5d) | 2021-05-25 13:00 → 2021-05-27 19:00 (+2d) | 1.88d → 2d |  |  |
| 64 | Corrección de errores | 2021-05-21 16:00 → 2021-05-26 10:00 (+5d) | 2021-05-25 11:00 → 2021-05-27 17:00 (+2d) |  |  |  |
| 65 | Informe de errores | 2021-05-25 11:00 → 2021-05-27 17:00 (+2d) | 2021-05-25 13:00 → 2021-05-27 19:00 (+2d) |  |  |  |
| 66 | **Fase de Despliegue** | 2021-05-12 10:00 → 2021-05-21 09:00 (+9d) | 2021-05-26 11:00 → 2021-05-28 17:00 (+2d) | 10.12d → 6.13d |  |  |
| 67 | **Diseño de Descriptores** | 2021-05-19 18:00 → 2021-05-28 09:00 (+9d) | 2021-05-25 19:00 → 2021-05-28 13:00 (+3d) | 4.12d → 0.53d | 0.25d → 0d |  |
| 68 | Descripción de servicio | 2021-05-19 18:00 → 2021-05-28 09:00 (+9d) | 2021-05-20 11:00 → 2021-05-28 12:00 (+8d) |  | 4d → 0.4d | 35 → 65 |
| 69 | Analisis de técnicas para el lanzamiento | 2021-05-25 15:00 → 2021-05-28 09:00 (+3d) | 2021-05-25 17:00 → 2021-05-28 11:00 (+3d) |  |  |  |
| 70 | Descripción de despliege | 2021-05-25 17:00 → 2021-05-28 11:00 (+3d) | 2021-05-25 19:00 → 2021-05-28 13:00 (+3d) |  |  |  |
| 71 | **Formación** | 2021-05-12 10:00 → 2021-05-21 09:00 (+9d) | 2021-05-26 11:00 → 2021-05-28 17:00 (+2d) | 10.12d → 6.13d |  |  |
| 72 | Redacción de guía para usuarios | 2021-05-12 10:00 → 2021-05-21 09:00 (+9d) | 2021-05-12 13:00 → 2021-05-21 12:00 (+9d) |  | 9.5d → 5.47d | 21 → 61 |
| 73 | Redacción de guía para técnicos | 2021-05-12 15:00 → 2021-05-21 09:00 (+9d) | 2021-05-12 19:00 → 2021-05-21 13:00 (+9d) |  | 9d → 5.33d | 22 → 61 |
| 74 | Impartir cursos para usuarios y técnicos | 2021-05-13 09:00 → 2021-05-21 15:00 (+8d) | 2021-05-13 11:00 → 2021-05-21 17:00 (+8d) |  | 9d → 5.33d |  |
| 75 | Evaluación del grado de aceptacion del producto | 2021-05-26 09:00 → 2021-05-28 15:00 (+2d) | 2021-05-26 11:00 → 2021-05-28 17:00 (+2d) |  |  |  |

## Version 3 (saved 2021-05-10, file doble.mpp)

Note of the change: Año3

Last finish 2021-05-28 → 2021-06-21 (+24d).

Changed:

| ID | Task | Start | Finish | Duration | Total float |
| --- | --- | --- | --- | --- | --- |
| 1 | **Game Discovery** |  | 2021-05-28 17:00 → 2021-06-21 13:00 (+24d) | 16.8d → 33.6d |  |
| 2 | **Fase de Análisis** |  | 2021-05-14 10:00 → 2021-05-21 11:00 (+7d) | 5.47d → 10.93d |  |
| 3 | **Declaración de alcance** |  | 2021-05-10 12:00 → 2021-05-11 17:00 (+1d) | 1.47d → 2.93d |  |
| 4 | DAFO |  | 2021-05-07 16:00 → 2021-05-10 11:00 (+3d) | 5h → 10h |  |
| 5 | Planificación económica | 2021-05-07 16:00 → 2021-05-10 11:00 (+3d) | 2021-05-10 10:00 → 2021-05-11 11:00 (+1d) | 4h → 8h | 15.6d → 31.2d |
| 6 | Priorización de objetivos | 2021-05-07 16:00 → 2021-05-10 11:00 (+3d) | 2021-05-07 19:00 → 2021-05-10 19:00 (+3d) | 3h → 6h | 15.33d → 30.67d |
| 7 | Planificación de tiempos | 2021-05-10 09:00 → 2021-05-11 09:00 (+1d) | 2021-05-10 12:00 → 2021-05-11 17:00 (+1d) | 3h → 6h | 15.33d → 30.67d |
| 8 | **Análisis de requisitos** | 2021-05-07 16:00 → 2021-05-10 11:00 (+3d) | 2021-05-11 18:00 → 2021-05-14 17:00 (+3d) | 2.4d → 4.8d |  |
| 9 | Identificación de RF y RNF | 2021-05-07 16:00 → 2021-05-10 11:00 (+3d) | 2021-05-10 10:00 → 2021-05-11 11:00 (+1d) | 4h → 8h |  |
| 10 | Priorización de RF | 2021-05-10 10:00 → 2021-05-11 11:00 (+1d) | 2021-05-10 13:00 → 2021-05-11 19:00 (+1d) | 3h → 6h |  |
| 11 | Análisis de arquitectura | 2021-05-10 15:00 → 2021-05-12 09:00 (+2d) | 2021-05-11 10:00 → 2021-05-13 11:00 (+2d) | 5h → 10h |  |
| 12 | Realización de diagramas de casos de uso | 2021-05-11 10:00 → 2021-05-13 11:00 (+2d) | 2021-05-11 18:00 → 2021-05-14 17:00 (+3d) | 6h → 12h |  |
| 13 | **Validación** | 2021-05-10 15:00 → 2021-05-12 09:00 (+2d) | 2021-05-14 10:00 → 2021-05-21 11:00 (+7d) | 3.87d → 7.73d | 1.47d → 2.93d |
| 14 | Definición de la validación RF | 2021-05-10 15:00 → 2021-05-12 09:00 (+2d) | 2021-05-10 19:00 → 2021-05-12 19:00 (+2d) | 4h → 8h | 14.67d → 29.33d |
| 15 | Definición de la integración | 2021-05-11 18:00 → 2021-05-14 17:00 (+3d) | 2021-05-12 12:00 → 2021-05-17 17:00 (+5d) | 4h → 8h |  |
| 16 | Definición de medidas de aseguramiento de la calidad | 2021-05-12 12:00 → 2021-05-17 17:00 (+5d) | 2021-05-12 19:00 → 2021-05-18 19:00 (+6d) | 5h → 10h |  |
| 17 | Definición de la validación de la arquitectura | 2021-05-13 09:00 → 2021-05-19 09:00 (+6d) | 2021-05-13 13:00 → 2021-05-19 19:00 (+6d) | 4h → 8h |  |
| 18 | Definición de la migración | 2021-05-13 15:00 → 2021-05-20 09:00 (+7d) | 2021-05-14 10:00 → 2021-05-21 11:00 (+7d) | 5h → 10h | 11.33d → 22.67d |
| 19 | **Fase de Diseño** | 2021-05-13 15:00 → 2021-05-20 09:00 (+7d) | 2021-05-19 13:00 → 2021-05-31 19:00 (+12d) | 4.27d → 8.53d |  |
| 20 | **Diseño de la IU** | 2021-05-13 15:00 → 2021-05-20 09:00 (+7d) | 2021-05-14 17:00 → 2021-05-24 13:00 (+10d) | 1.33d → 2.67d |  |
| 21 | Interfaz de la app de técnicos | 2021-05-13 15:00 → 2021-05-20 09:00 (+7d) | 2021-05-13 17:00 → 2021-05-20 13:00 (+7d) | 2h → 4h | 0.4d → 0.8d |
| 22 | Interfaz de la app de usuarios | 2021-05-13 15:00 → 2021-05-20 09:00 (+7d) | 2021-05-14 10:00 → 2021-05-21 11:00 (+7d) | 5h → 10h |  |
| 23 | Interfaz de la página web | 2021-05-14 10:00 → 2021-05-21 11:00 (+7d) | 2021-05-14 17:00 → 2021-05-24 13:00 (+10d) | 5h → 10h |  |
| 24 | **Diseño de los módulos** | 2021-05-14 17:00 → 2021-05-24 15:00 (+10d) | 2021-05-18 19:00 → 2021-05-28 19:00 (+10d) | 2.4d → 4.8d | 8.27d → 16.53d |
| 25 | Diseño del módulo de inversores | 2021-05-14 17:00 → 2021-05-24 15:00 (+10d) | 2021-05-17 18:00 → 2021-05-26 17:00 (+9d) | 9h → 18h | 8.27d → 16.53d |
| 26 | Diseño del módulo de clientes | 2021-05-17 18:00 → 2021-05-26 17:00 (+9d) | 2021-05-18 19:00 → 2021-05-28 19:00 (+10d) | 9h → 18h | 8.27d → 16.53d |
| 27 | **Diseño de la arquitectura** | 2021-05-13 17:00 → 2021-05-20 15:00 (+7d) | 2021-05-17 16:00 → 2021-05-26 11:00 (+9d) | 2d → 4d | 1.07d → 2.13d |
| 28 | Lógica del módulo de técnicos | 2021-05-13 17:00 → 2021-05-20 15:00 (+7d) | 2021-05-13 19:00 → 2021-05-20 19:00 (+7d) | 2h → 4h | 2.93d → 5.87d |
| 29 | Lógica del módulo de usuarios | 2021-05-14 10:00 → 2021-05-21 11:00 (+7d) | 2021-05-14 19:00 → 2021-05-24 19:00 (+10d) | 7h → 14h | 0.67d → 1.33d |
| 30 | Lógica de la página web | 2021-05-14 17:00 → 2021-05-24 15:00 (+10d) | 2021-05-17 16:00 → 2021-05-26 11:00 (+9d) | 7h → 14h |  |
| 31 | **Diseño de bases de datos** | 2021-05-17 16:00 → 2021-05-26 11:00 (+9d) | 2021-05-19 13:00 → 2021-05-31 19:00 (+12d) | 2d → 4d | 3.33d → 6.67d |
| 32 | Seguridad | 2021-05-17 16:00 → 2021-05-26 11:00 (+9d) | 2021-05-18 11:00 → 2021-05-27 13:00 (+9d) | 5h → 10h | 3.33d → 6.67d |
| 33 | Diseño de permisos | 2021-05-18 11:00 → 2021-05-27 15:00 (+9d) | 2021-05-18 18:00 → 2021-05-28 17:00 (+10d) | 5h → 10h | 5.6d → 11.2d |
| 34 | Diseño de datos | 2021-05-18 18:00 → 2021-05-28 17:00 (+10d) | 2021-05-19 13:00 → 2021-05-31 19:00 (+12d) | 5h → 10h | 5.6d → 11.2d |
| 35 | **Fase de Implementación** | 2021-05-13 17:00 → 2021-05-20 15:00 (+7d) | 2021-05-21 13:00 → 2021-06-04 19:00 (+14d) | 6.13d → 12.27d | 2d → 4d |
| 36 | **Módulos** | 2021-05-19 15:00 → 2021-06-01 09:00 (+13d) | 2021-05-21 13:00 → 2021-06-04 19:00 (+14d) | 2.13d → 4.27d | 5.6d → 11.2d |
| 37 | Implementación del módulo de inversores | 2021-05-19 15:00 → 2021-06-01 09:00 (+13d) | 2021-05-21 13:00 → 2021-06-04 19:00 (+14d) | 16h → 32h | 5.6d → 11.2d |
| 38 | Implementación del módulo de gestión | 2021-05-19 15:00 → 2021-06-01 09:00 (+13d) | 2021-05-21 13:00 → 2021-06-04 19:00 (+14d) | 16h → 32h | 5.6d → 11.2d |
| 39 | **Implementación de base de datos** | 2021-05-18 11:00 → 2021-05-27 15:00 (+9d) | 2021-05-19 18:00 → 2021-06-01 17:00 (+13d) | 1.73d → 3.47d | 3.33d → 6.67d |
| 40 | Seguridad | 2021-05-18 11:00 → 2021-05-27 15:00 (+9d) | 2021-05-19 11:00 → 2021-05-31 13:00 (+12d) | 8h → 16h | 3.33d → 6.67d |
| 41 | Implementación de permisos | 2021-05-18 18:00 → 2021-05-28 17:00 (+10d) | 2021-05-19 18:00 → 2021-06-01 17:00 (+13d) | 8h → 16h | 6.67d → 13.33d |
| 42 | **Implementación de la IU** | 2021-05-13 17:00 → 2021-05-20 15:00 (+7d) | 2021-05-18 12:00 → 2021-05-27 17:00 (+9d) | 2.8d → 5.6d | 8.93d → 17.87d |
| 43 | Interfaz de app para técnicos | 2021-05-13 17:00 → 2021-05-20 15:00 (+7d) | 2021-05-14 12:00 → 2021-05-21 17:00 (+7d) | 5h → 10h | 11.07d → 22.13d |
| 44 | Interfaz de app para clientes | 2021-05-14 10:00 → 2021-05-21 11:00 (+7d) | 2021-05-17 17:00 → 2021-05-26 13:00 (+9d) | 13h → 26h | 9.6d → 19.2d |
| 45 | Interfaz de página web | 2021-05-14 17:00 → 2021-05-24 15:00 (+10d) | 2021-05-18 12:00 → 2021-05-27 17:00 (+9d) | 13h → 26h | 8.93d → 17.87d |
| 46 | **Implementación de la arquitectura** | 2021-05-14 09:00 → 2021-05-21 09:00 (+7d) | 2021-05-19 18:00 → 2021-06-01 17:00 (+13d) | 4.13d → 8.27d |  |
| 47 | Lógica de app para técnicos | 2021-05-14 09:00 → 2021-05-21 09:00 (+7d) | 2021-05-17 10:00 → 2021-05-25 11:00 (+8d) | 9h → 18h | 2.93d → 5.87d |
| 48 | Lógica de app para clientes | 2021-05-17 09:00 → 2021-05-25 09:00 (+8d) | 2021-05-19 11:00 → 2021-05-31 13:00 (+12d) | 18h → 36h | 0.67d → 1.33d |
| 49 | Lógica de página web | 2021-05-17 16:00 → 2021-05-26 11:00 (+9d) | 2021-05-19 18:00 → 2021-06-01 17:00 (+13d) | 18h → 36h |  |
| 50 | **Fase de validación y pruebas** | 2021-05-19 11:00 → 2021-05-31 15:00 (+12d) | 2021-05-27 19:00 → 2021-06-17 19:00 (+21d) | 7.2d → 14.4d | 0.67d → 1.33d |
| 51 | **Casos de prueba** | 2021-05-19 18:00 → 2021-06-01 17:00 (+13d) | 2021-05-20 16:00 → 2021-06-03 11:00 (+14d) | 0.8d → 1.6d | 3.6d → 7.2d |
| 52 | Diseño de datos de entrada | 2021-05-19 18:00 → 2021-06-01 17:00 (+13d) | 2021-05-20 11:00 → 2021-06-02 13:00 (+13d) | 3h → 6h | 3.6d → 7.2d |
| 53 | Introducción de datos en la base de datos | 2021-05-19 18:00 → 2021-06-01 17:00 (+13d) | 2021-05-20 10:00 → 2021-06-02 11:00 (+13d) | 2h → 4h | 6.67d → 13.33d |
| 54 | Validar consistencia de datos | 2021-05-20 11:00 → 2021-06-02 15:00 (+13d) | 2021-05-20 16:00 → 2021-06-03 11:00 (+14d) | 3h → 6h | 6.53d → 13.07d |
| 55 | **Datos de prueba** | 2021-05-20 11:00 → 2021-06-02 15:00 (+13d) | 2021-05-20 17:00 → 2021-06-03 13:00 (+14d) | 0.53d → 1.07d | 3.6d → 7.2d |
| 56 | Datos de entrada | 2021-05-20 11:00 → 2021-06-02 15:00 (+13d) | 2021-05-20 13:00 → 2021-06-02 19:00 (+13d) | 2h → 4h | 3.6d → 7.2d |
| 57 | Datos de salida | 2021-05-20 15:00 → 2021-06-03 09:00 (+14d) | 2021-05-20 17:00 → 2021-06-03 13:00 (+14d) | 2h → 4h | 3.6d → 7.2d |
| 58 | **Pruebas unitarias** | 2021-05-19 11:00 → 2021-05-31 15:00 (+12d) | 2021-05-26 10:00 → 2021-06-14 11:00 (+19d) | 5.2d → 10.4d |  |
| 59 | Pruebas de arquitectura | 2021-05-19 18:00 → 2021-06-01 17:00 (+13d) | 2021-05-21 16:00 → 2021-06-07 11:00 (+17d) | 14h → 28h |  |
| 60 | Pruebas de aceptación | 2021-05-21 16:00 → 2021-06-07 11:00 (+17d) | 2021-05-24 18:00 → 2021-06-09 17:00 (+16d) | 10h → 20h |  |
| 61 | Pruebas de seguridad | 2021-05-19 11:00 → 2021-05-31 15:00 (+12d) | 2021-05-20 19:00 → 2021-06-03 19:00 (+14d) | 14h → 28h | 3.33d → 6.67d |
| 62 | Pruebas de integración software | 2021-05-24 18:00 → 2021-06-09 17:00 (+16d) | 2021-05-26 10:00 → 2021-06-14 11:00 (+19d) | 10h → 20h |  |
| 63 | **Tratamiento de errores** | 2021-05-26 10:00 → 2021-06-14 11:00 (+19d) | 2021-05-27 19:00 → 2021-06-17 19:00 (+21d) | 2d → 4d |  |
| 64 | Corrección de errores | 2021-05-26 10:00 → 2021-06-14 11:00 (+19d) | 2021-05-27 17:00 → 2021-06-17 13:00 (+21d) | 13h → 26h |  |
| 65 | Informe de errores | 2021-05-27 17:00 → 2021-06-17 15:00 (+21d) | 2021-05-27 19:00 → 2021-06-17 19:00 (+21d) | 2h → 4h |  |
| 66 | **Fase de Despliegue** | 2021-05-21 09:00 → 2021-06-04 09:00 (+14d) | 2021-05-28 17:00 → 2021-06-21 13:00 (+24d) | 6.13d → 12.27d |  |
| 67 | **Diseño de Descriptores** | 2021-05-28 09:00 → 2021-06-18 09:00 (+21d) | 2021-05-28 13:00 → 2021-06-18 19:00 (+21d) | 0.53d → 1.07d |  |
| 68 | Descripción de servicio | 2021-05-28 09:00 → 2021-06-18 09:00 (+21d) | 2021-05-28 12:00 → 2021-06-18 17:00 (+21d) | 3h → 6h | 0.4d → 0.8d |
| 69 | Analisis de técnicas para el lanzamiento | 2021-05-28 09:00 → 2021-06-18 09:00 (+21d) | 2021-05-28 11:00 → 2021-06-18 13:00 (+21d) | 2h → 4h |  |
| 70 | Descripción de despliege | 2021-05-28 11:00 → 2021-06-18 15:00 (+21d) | 2021-05-28 13:00 → 2021-06-18 19:00 (+21d) | 2h → 4h |  |

| ID | Task | Start | Finish | Duration | Total float |
| --- | --- | --- | --- | --- | --- |
| 71 | **Formación** | 2021-05-21 09:00 → 2021-06-04 09:00 (+14d) | 2021-05-28 17:00 → 2021-06-21 13:00 (+24d) | 6.13d → 12.27d |  |
| 72 | Redacción de guía para usuarios | 2021-05-21 09:00 → 2021-06-04 09:00 (+14d) | 2021-05-21 12:00 → 2021-06-04 17:00 (+14d) | 3h → 6h | 5.47d → 10.93d |
| 73 | Redacción de guía para técnicos | 2021-05-21 09:00 → 2021-06-04 09:00 (+14d) | 2021-05-21 13:00 → 2021-06-04 19:00 (+14d) | 4h → 8h | 5.33d → 10.67d |
| 74 | Impartir cursos para usuarios y técnicos | 2021-05-21 15:00 → 2021-06-07 09:00 (+17d) | 2021-05-21 17:00 → 2021-06-07 13:00 (+17d) | 2h → 4h | 5.33d → 10.67d |
| 75 | Evaluación del grado de aceptacion del producto | 2021-05-28 15:00 → 2021-06-21 09:00 (+24d) | 2021-05-28 17:00 → 2021-06-21 13:00 (+24d) | 2h → 4h |  |

## Version 4 (saved 2021-05-17, file GameDiscoveryRR.mpp)

Note of the change: Año3

Last finish 2021-06-21 → 2021-06-23 (+2d).

Changed:

| ID | Task | Start | Finish | Duration | Total float | Predecessors | Other |
| --- | --- | --- | --- | --- | --- | --- | --- |
| 1 | **Game Discovery** | 2021-05-07 09:00 → 2021-05-07 | 2021-06-21 13:00 → 2021-06-23 (+2d) | 33.6d → 35.73d |  |  |  |
| 2 | **Fase de Análisis** | 2021-05-07 09:00 → 2021-05-07 | 2021-05-21 11:00 → 2021-05-21 |  |  |  |  |
| 3 | **Declaración de alcance** | 2021-05-07 09:00 → 2021-05-07 | 2021-05-11 17:00 → 2021-05-12 (+1d) | 2.93d → 4d |  |  |  |
| 4 | DAFO | 2021-05-07 09:00 → 2021-05-07 | 2021-05-10 11:00 → 2021-05-10 |  |  |  | resources none → Analistas; Jefe de proyecto |
| 5 | Planificación económica | 2021-05-10 11:00 → 2021-05-10 | 2021-05-11 11:00 → 2021-05-11 |  | 31.2d → 31.73d |  | resources none → Analistas; Subdirector |
| 6 | Priorización de objetivos | 2021-05-10 11:00 → 2021-05-11 (+1d) | 2021-05-10 19:00 → 2021-05-11 (+1d) |  | 30.67d → 31.73d | 4 → 5 | resources none → Analistas; Subdirector |
| 7 | Planificación de tiempos | 2021-05-11 09:00 → 2021-05-12 (+1d) | 2021-05-11 17:00 → 2021-05-12 (+1d) |  | 30.67d → 31.73d |  | resources none → Analistas; Subdirector |
| 8 | **Análisis de requisitos** | 2021-05-10 11:00 → 2021-05-10 | 2021-05-14 17:00 → 2021-05-14 |  |  |  |  |
| 9 | Identificación de RF y RNF | 2021-05-10 11:00 → 2021-05-10 | 2021-05-11 11:00 → 2021-05-11 |  |  |  | resources none → Analistas; Jefe de proyecto |
| 10 | Priorización de RF | 2021-05-11 11:00 → 2021-05-11 | 2021-05-11 19:00 → 2021-05-11 |  |  |  | resources none → Analistas; Jefe de proyecto |
| 11 | Análisis de arquitectura | 2021-05-12 09:00 → 2021-05-12 | 2021-05-13 11:00 → 2021-05-13 |  |  |  | resources none → Analistas |
| 12 | Realización de diagramas de casos de uso | 2021-05-13 11:00 → 2021-05-13 | 2021-05-14 17:00 → 2021-05-14 |  |  |  | resources none → Analistas; Jefe de proyecto |
| 13 | **Validación** | 2021-05-12 09:00 → 2021-05-12 | 2021-05-21 11:00 → 2021-05-21 |  |  |  |  |
| 14 | Definición de la validación RF | 2021-05-12 09:00 → 2021-05-12 | 2021-05-12 19:00 → 2021-05-12 |  | 29.33d → 31.47d |  | resources none → Analistas; Jefe de proyecto |
| 15 | Definición de la integración | 2021-05-14 17:00 → 2021-05-14 | 2021-05-17 17:00 → 2021-05-17 |  |  |  | resources none → Analistas; Jefe de proyecto |
| 16 | Definición de medidas de aseguramiento de la calidad | 2021-05-17 17:00 → 2021-05-17 | 2021-05-18 19:00 → 2021-05-18 |  |  |  | resources none → Analistas; Jefe de proyecto |
| 17 | Definición de la validación de la arquitectura | 2021-05-19 09:00 → 2021-05-19 | 2021-05-19 19:00 → 2021-05-19 |  |  |  | resources none → Analistas; Jefe de proyecto |
| 18 | Definición de la migración | 2021-05-20 09:00 → 2021-05-20 | 2021-05-21 11:00 → 2021-05-21 |  | 22.67d → 24.8d |  | resources none → Analistas; Jefe de proyecto |
| 19 | **Fase de Diseño** | 2021-05-20 09:00 → 2021-05-20 | 2021-05-31 19:00 → 2021-06-08 (+8d) | 8.53d → 14.4d |  |  |  |
| 20 | **Diseño de la IU** | 2021-05-20 09:00 → 2021-05-20 | 2021-05-24 13:00 → 2021-05-26 (+2d) | 2.67d → 4.8d |  |  |  |
| 21 | Interfaz de la app de técnicos | 2021-05-20 09:00 → 2021-05-20 | 2021-05-20 13:00 → 2021-05-20 | 4h → 2h | 0.8d → 2.13d |  | resources none → Diseñador |
| 22 | Interfaz de la app de usuarios | 2021-05-20 09:00 → 2021-05-20 | 2021-05-21 11:00 → 2021-05-24 (+3d) |  |  |  | resources none → Diseñador |
| 23 | Interfaz de la página web | 2021-05-21 11:00 → 2021-05-24 (+3d) | 2021-05-24 13:00 → 2021-05-26 (+2d) |  |  |  | resources none → Diseñador |
| 24 | **Diseño de los módulos** | 2021-05-24 15:00 → 2021-05-27 (+3d) | 2021-05-28 19:00 → 2021-06-08 (+11d) | 4.8d → 9.07d | 16.53d → 11.73d |  |  |
| 25 | Diseño del módulo de inversores | 2021-05-24 15:00 → 2021-05-27 (+3d) | 2021-05-26 17:00 → 2021-06-02 (+7d) |  | 16.53d → 11.73d |  | resources none → Diseñador |
| 26 | Diseño del módulo de clientes | 2021-05-26 17:00 → 2021-06-02 (+7d) | 2021-05-28 19:00 → 2021-06-08 (+11d) |  | 16.53d → 11.73d |  | resources none → Diseñador |
| 27 | **Diseño de la arquitectura** | 2021-05-20 15:00 → 2021-05-20 | 2021-05-26 11:00 → 2021-05-28 (+2d) | 4d → 6.4d | 2.13d → 2.4d |  |  |
| 28 | Lógica del módulo de técnicos | 2021-05-20 15:00 → 2021-05-20 | 2021-05-20 19:00 → 2021-05-20 |  | 5.87d → 8.27d |  | resources none → Programadores; Analistas |
| 29 | Lógica del módulo de usuarios | 2021-05-21 11:00 → 2021-05-24 (+3d) | 2021-05-24 19:00 → 2021-05-26 (+2d) | 14h → 22h |  |  | resources none → Programadores; Analistas |
| 30 | Lógica de la página web | 2021-05-24 15:00 → 2021-05-26 (+2d) | 2021-05-26 11:00 → 2021-05-28 (+2d) |  |  |  | resources none → Programadores; Analistas |
| 31 | **Diseño de bases de datos** | 2021-05-26 11:00 → 2021-05-28 (+2d) | 2021-05-31 19:00 → 2021-06-02 (+2d) |  |  |  |  |
| 32 | Seguridad | 2021-05-26 11:00 → 2021-05-28 (+2d) | 2021-05-27 13:00 → 2021-05-31 (+4d) |  |  |  | resources none → Programadores; Analistas |
| 33 | Diseño de permisos | 2021-05-27 15:00 → 2021-05-31 (+4d) | 2021-05-28 17:00 → 2021-06-01 (+4d) |  |  |  | resources none → Programadores; Analistas |
| 34 | Diseño de datos | 2021-05-28 17:00 → 2021-06-01 (+4d) | 2021-05-31 19:00 → 2021-06-02 (+2d) |  |  |  | resources none → Programadores; Analistas |
| 35 | **Fase de Implementación** | 2021-05-20 15:00 → 2021-05-20 | 2021-06-04 19:00 → 2021-06-08 (+4d) | 12.27d → 14.67d | 4d → 6.4d |  |  |
| 36 | **Módulos** | 2021-06-01 09:00 → 2021-06-03 (+2d) | 2021-06-04 19:00 → 2021-06-08 (+4d) |  |  |  |  |
| 37 | Implementación del módulo de inversores | 2021-06-01 09:00 → 2021-06-03 (+2d) | 2021-06-04 19:00 → 2021-06-08 (+4d) |  |  |  | resources none → Programadores |
| 38 | Implementación del módulo de gestión | 2021-06-01 09:00 → 2021-06-03 (+2d) | 2021-06-04 19:00 → 2021-06-08 (+4d) |  |  |  | resources none → Programadores |
| 39 | **Implementación de base de datos** | 2021-05-27 15:00 → 2021-05-31 (+4d) | 2021-06-01 17:00 → 2021-06-03 (+2d) |  |  |  |  |
| 40 | Seguridad | 2021-05-27 15:00 → 2021-05-31 (+4d) | 2021-05-31 13:00 → 2021-06-02 (+2d) |  |  |  | resources none → Programadores |
| 41 | Implementación de permisos | 2021-05-28 17:00 → 2021-06-01 (+4d) | 2021-06-01 17:00 → 2021-06-03 (+2d) |  |  |  | resources none → Programadores |
| 42 | **Implementación de la IU** | 2021-05-20 15:00 → 2021-05-20 | 2021-05-27 17:00 → 2021-05-31 (+4d) | 5.6d → 8d |  |  |  |
| 43 | Interfaz de app para técnicos | 2021-05-20 15:00 → 2021-05-20 | 2021-05-21 17:00 → 2021-05-21 |  | 22.13d → 24.53d |  | resources none → Programadores |
| 44 | Interfaz de app para clientes | 2021-05-21 11:00 → 2021-05-24 (+3d) | 2021-05-26 13:00 → 2021-05-27 (+1d) |  | 19.2d → 20.27d |  | resources none → Programadores |
| 45 | Interfaz de página web | 2021-05-24 15:00 → 2021-05-26 (+2d) | 2021-05-27 17:00 → 2021-05-31 (+4d) |  |  |  |  |
| 46 | **Implementación de la arquitectura** | 2021-05-21 09:00 → 2021-05-20 (-1d) | 2021-06-01 17:00 → 2021-06-03 (+2d) | 8.27d → 10.67d |  |  |  |
| 47 | Lógica de app para técnicos | 2021-05-21 09:00 → 2021-05-20 (-1d) | 2021-05-25 11:00 → 2021-05-24 (-1d) |  | 5.87d → 8.27d |  | resources none → Programadores |
| 48 | Lógica de app para clientes | 2021-05-25 09:00 → 2021-05-27 (+2d) | 2021-05-31 13:00 → 2021-06-02 (+2d) |  |  |  | resources none → Programadores |
| 49 | Lógica de página web | 2021-05-26 11:00 → 2021-05-28 (+2d) | 2021-06-01 17:00 → 2021-06-03 (+2d) |  |  |  |  |
| 50 | **Fase de validación y pruebas** | 2021-05-31 15:00 → 2021-06-02 (+2d) | 2021-06-17 19:00 → 2021-06-21 (+4d) |  |  |  |  |
| 51 | **Casos de prueba** | 2021-06-01 17:00 → 2021-06-03 (+2d) | 2021-06-03 11:00 → 2021-06-07 (+4d) |  | 7.2d → 6.13d |  |  |
| 52 | Diseño de datos de entrada | 2021-06-01 17:00 → 2021-06-03 (+2d) | 2021-06-02 13:00 → 2021-06-04 (+2d) |  | 7.2d → 6.13d |  | resources none → Analistas; Programadores |
| 53 | Introducción de datos en la base de datos | 2021-06-01 17:00 → 2021-06-03 (+2d) | 2021-06-02 11:00 → 2021-06-04 (+2d) |  |  |  | resources none → Analistas; Programadores |
| 54 | Validar consistencia de datos | 2021-06-02 15:00 → 2021-06-04 (+2d) | 2021-06-03 11:00 → 2021-06-07 (+4d) |  |  |  | resources none → Analistas; Programadores |
| 55 | **Datos de prueba** | 2021-06-02 15:00 → 2021-06-04 (+2d) | 2021-06-03 13:00 → 2021-06-08 (+5d) | 1.07d → 2.13d | 7.2d → 6.13d |  |  |
| 56 | Datos de entrada | 2021-06-02 15:00 → 2021-06-04 (+2d) | 2021-06-02 19:00 → 2021-06-07 (+5d) | 4h → 8h | 7.2d → 6.13d |  | resources none → Analistas; Programadores_M |
| 57 | Datos de salida | 2021-06-03 09:00 → 2021-06-07 (+4d) | 2021-06-03 13:00 → 2021-06-08 (+5d) | 4h → 8h | 7.2d → 6.13d |  | resources none → Analistas; Programadores_M |
| 58 | **Pruebas unitarias** | 2021-05-31 15:00 → 2021-06-02 (+2d) | 2021-06-14 11:00 → 2021-06-16 (+2d) |  |  |  |  |
| 59 | Pruebas de arquitectura | 2021-06-01 17:00 → 2021-06-03 (+2d) | 2021-06-07 11:00 → 2021-06-09 (+2d) |  |  |  | resources none → Analistas; Programadores |
| 60 | Pruebas de aceptación | 2021-06-07 11:00 → 2021-06-09 (+2d) | 2021-06-09 17:00 → 2021-06-11 (+2d) |  |  |  | resources none → Analistas; Programadores |
| 61 | Pruebas de seguridad | 2021-05-31 15:00 → 2021-06-02 (+2d) | 2021-06-03 19:00 → 2021-06-07 (+4d) |  |  |  | resources none → Analistas; Programadores |
| 62 | Pruebas de integración software | 2021-06-09 17:00 → 2021-06-11 (+2d) | 2021-06-14 11:00 → 2021-06-16 (+2d) |  |  |  | resources none → Analistas; Programadores |
| 63 | **Tratamiento de errores** | 2021-06-14 11:00 → 2021-06-16 (+2d) | 2021-06-17 19:00 → 2021-06-21 (+4d) |  |  |  |  |
| 64 | Corrección de errores | 2021-06-14 11:00 → 2021-06-16 (+2d) | 2021-06-17 13:00 → 2021-06-21 (+4d) |  |  |  | resources none → Analistas; Programadores |
| 65 | Informe de errores | 2021-06-17 15:00 → 2021-06-21 (+4d) | 2021-06-17 19:00 → 2021-06-21 (+4d) |  |  |  | resources none → Analistas; Programadores |
| 66 | **Fase de Despliegue** | 2021-06-04 09:00 → 2021-06-08 (+4d) | 2021-06-21 13:00 → 2021-06-23 (+2d) |  |  |  |  |
| 67 | **Diseño de Descriptores** | 2021-06-18 09:00 → 2021-06-22 (+4d) | 2021-06-18 19:00 → 2021-06-22 (+4d) |  |  |  |  |
| 68 | Descripción de servicio | 2021-06-18 09:00 → 2021-06-22 (+4d) | 2021-06-18 17:00 → 2021-06-22 (+4d) |  |  |  | resources none → Analistas; Jefe de proyecto |
| 69 | Analisis de técnicas para el lanzamiento | 2021-06-18 09:00 → 2021-06-22 (+4d) | 2021-06-18 13:00 → 2021-06-22 (+4d) |  |  |  | resources none → Analistas; Subdirector |
| 70 | Descripción de despliege | 2021-06-18 15:00 → 2021-06-22 (+4d) | 2021-06-18 19:00 → 2021-06-22 (+4d) |  |  |  | resources none → Analistas; Subdirector |

| ID | Task | Start | Finish | Other |
| --- | --- | --- | --- | --- |
| 71 | **Formación** | 2021-06-04 09:00 → 2021-06-08 (+4d) | 2021-06-21 13:00 → 2021-06-23 (+2d) |  |
| 72 | Redacción de guía para usuarios | 2021-06-04 09:00 → 2021-06-08 (+4d) | 2021-06-04 17:00 → 2021-06-08 (+4d) | resources none → Analistas; Programadores |
| 73 | Redacción de guía para técnicos | 2021-06-04 09:00 → 2021-06-08 (+4d) | 2021-06-04 19:00 → 2021-06-08 (+4d) | resources none → Analistas; Programadores |
| 74 | Impartir cursos para usuarios y técnicos | 2021-06-07 09:00 → 2021-06-09 (+2d) | 2021-06-07 13:00 → 2021-06-09 (+2d) | resources none → Analistas |
| 75 | Evaluación del grado de aceptacion del producto | 2021-06-21 09:00 → 2021-06-23 (+2d) | 2021-06-21 13:00 → 2021-06-23 (+2d) | resources none → Analistas |

## Version 5 (saved 2021-05-24, file recursoslb.mpp)

Note of the change: Año3

Last finish 2021-06-23 → 2021-06-30 (+7d). Complete tasks 0 → 59.

Added:

| ID | Task | Duration | Start | Finish | Predecessors |
| --- | --- | --- | --- | --- | --- |
| 8 | Alcance logrado | 0h | 2021-05-12 A | 2021-05-12 A | 7 |
| 14 | Requisitos analizados | 0h | 2021-05-19 A | 2021-05-19 A | 13 |
| 21 | Definición del proyecto terminada | 0h | 2021-05-25 A | 2021-05-25 A | 20 |
| 38 | Diseño completado | 0h | 2021-06-04 A | 2021-06-04 A | 37 |
| 54 | Versión preliminar del producto | 0h | 2021-06-10 A | 2021-06-10 A | 51, 52, 53, 41, 42, 44, 45, 47, 48, 49 |
| 71 | Testing acabado | 0h | 2021-06-25 A | 2021-06-25 A | 70 |
| 82 | Finalización de proyecto | 0h | 2021-06-30 A | 2021-06-30 A | 81 |

Changed:

| ID | Task | Start | Finish | Duration | Complete | Total float | Predecessors | Other |
| --- | --- | --- | --- | --- | --- | --- | --- | --- |
| 1 | **Game Discovery** | 2021-05-07 A | 2021-06-23 → 2021-06-30 A (+7d) | 35.73d → 40.8d | 0% → 100% | 0d → none |  | baseline start none → 2021-05-07; baseline finish none → 2021-06-30 |
| 2 | **Fase de Análisis** | 2021-05-07 A | 2021-05-21 → 2021-05-25 A (+4d) | 10.93d → 13.6d | 0% → 100% | 0d → none |  | baseline start none → 2021-05-07; baseline finish none → 2021-05-25 |
| 3 | **Declaración de alcance** | 2021-05-07 A | 2021-05-12 A |  | 0% → 100% | 0d → none |  | baseline start none → 2021-05-07; baseline finish none → 2021-05-12 |
| 4 | DAFO | 2021-05-07 A | 2021-05-10 A |  | 0% → 100% | 0d → none |  | baseline start none → 2021-05-07; baseline finish none → 2021-05-10 |
| 5 | Planificación económica | 2021-05-10 A | 2021-05-11 A |  | 0% → 100% | 31.73d → none |  | baseline start none → 2021-05-10; baseline finish none → 2021-05-11 |
| 6 | Priorización de objetivos | 2021-05-11 A | 2021-05-11 A |  | 0% → 100% | 31.73d → none |  | baseline start none → 2021-05-11; baseline finish none → 2021-05-11 |
| 7 | Planificación de tiempos | 2021-05-12 A | 2021-05-12 A |  | 0% → 100% | 31.73d → none |  | baseline start none → 2021-05-12; baseline finish none → 2021-05-12 |
| 9 | **Análisis de requisitos** | 2021-05-10 → 2021-05-12 A (+2d) | 2021-05-14 → 2021-05-19 A (+5d) |  | 0% → 100% | 0d → none |  | baseline start none → 2021-05-12; baseline finish none → 2021-05-19 |
| 10 | Identificación de RF y RNF | 2021-05-10 → 2021-05-12 A (+2d) | 2021-05-11 → 2021-05-13 A (+2d) |  | 0% → 100% | 0d → none | 4 → 4, 8 | baseline start none → 2021-05-12; baseline finish none → 2021-05-13 |
| 11 | Priorización de RF | 2021-05-11 → 2021-05-13 A (+2d) | 2021-05-11 → 2021-05-14 A (+3d) |  | 0% → 100% | 0d → none |  | baseline start none → 2021-05-13; baseline finish none → 2021-05-14 |
| 12 | Análisis de arquitectura | 2021-05-12 → 2021-05-14 A (+2d) | 2021-05-13 → 2021-05-17 A (+4d) |  | 0% → 100% | 0d → none |  | baseline start none → 2021-05-14; baseline finish none → 2021-05-17 |
| 13 | Realización de diagramas de casos de uso | 2021-05-13 → 2021-05-17 A (+4d) | 2021-05-14 → 2021-05-19 A (+5d) |  | 0% → 100% | 0d → none |  | baseline start none → 2021-05-17; baseline finish none → 2021-05-19 |
| 15 | **Validación** | 2021-05-12 → 2021-05-14 A (+2d) | 2021-05-21 → 2021-05-25 A (+4d) |  | 0% → 100% | 2.93d → none |  | baseline start none → 2021-05-14; baseline finish none → 2021-05-25 |
| 16 | Definición de la validación RF | 2021-05-12 → 2021-05-14 A (+2d) | 2021-05-12 → 2021-05-17 A (+5d) |  | 0% → 100% | 31.47d → none |  | baseline start none → 2021-05-14; baseline finish none → 2021-05-17 |
| 17 | Definición de la integración | 2021-05-14 → 2021-05-19 A (+5d) | 2021-05-17 → 2021-05-20 A (+3d) |  | 0% → 100% | 0d → none | 13 → 13, 16 | baseline start none → 2021-05-19; baseline finish none → 2021-05-20 |
| 18 | Definición de medidas de aseguramiento de la calidad | 2021-05-17 → 2021-05-20 A (+3d) | 2021-05-18 → 2021-05-21 A (+3d) |  | 0% → 100% | 0d → none |  | baseline start none → 2021-05-20; baseline finish none → 2021-05-21 |
| 19 | Definición de la validación de la arquitectura | 2021-05-19 → 2021-05-21 A (+2d) | 2021-05-19 → 2021-05-24 A (+5d) |  | 0% → 100% | 0d → none |  | baseline start none → 2021-05-21; baseline finish none → 2021-05-24 |
| 20 | Definición de la migración | 2021-05-20 → 2021-05-24 A (+4d) | 2021-05-21 → 2021-05-25 A (+4d) |  | 0% → 100% | 24.8d → none |  | baseline start none → 2021-05-24; baseline finish none → 2021-05-25 |
| 22 | **Fase de Diseño** | 2021-05-20 → 2021-05-25 A (+5d) | 2021-06-08 → 2021-06-04 A (-4d) | 14.4d → 8.53d | 0% → 100% | 0d → none |  | baseline start none → 2021-05-25; baseline finish none → 2021-06-04 |
| 23 | **Diseño de la IU** | 2021-05-20 → 2021-05-25 A (+5d) | 2021-05-26 → 2021-05-28 A (+2d) | 4.8d → 2.67d | 0% → 100% | 0d → none |  | baseline start none → 2021-05-25; baseline finish none → 2021-05-28 |
| 24 | Interfaz de la app de técnicos | 2021-05-20 → 2021-05-25 A (+5d) | 2021-05-20 → 2021-05-25 A (+5d) |  | 0% → 100% | 2.13d → none | 18, 19 → 21 | baseline start none → 2021-05-25; baseline finish none → 2021-05-25 |
| 25 | Interfaz de la app de usuarios | 2021-05-20 → 2021-05-25 A (+5d) | 2021-05-24 → 2021-05-26 A (+2d) |  | 0% → 100% | 0d → none | 18, 19 → 21 | baseline start none → 2021-05-25; baseline finish none → 2021-05-26 |
| 26 | Interfaz de la página web | 2021-05-24 → 2021-05-27 A (+3d) | 2021-05-26 → 2021-05-28 A (+2d) |  | 0% → 100% | 0d → none |  | baseline start none → 2021-05-27; baseline finish none → 2021-05-28 |
| 27 | **Diseño de los módulos** | 2021-05-27 → 2021-05-28 A (+1d) | 2021-06-08 → 2021-06-03 A (-5d) | 9.07d → 4.8d | 0% → 100% | 11.73d → none |  | baseline start none → 2021-05-28; baseline finish none → 2021-06-03 |
| 28 | Diseño del módulo de inversores | 2021-05-27 → 2021-05-28 A (+1d) | 2021-06-02 → 2021-06-01 A (-1d) |  | 0% → 100% | 11.73d → none |  | baseline start none → 2021-05-28; baseline finish none → 2021-06-01 |
| 29 | Diseño del módulo de clientes | 2021-06-02 → 2021-06-01 A (-1d) | 2021-06-08 → 2021-06-03 A (-5d) |  | 0% → 100% | 11.73d → none |  | baseline start none → 2021-06-01; baseline finish none → 2021-06-03 |
| 30 | **Diseño de la arquitectura** | 2021-05-20 → 2021-05-26 A (+6d) | 2021-05-28 → 2021-05-31 A (+3d) | 6.4d → 4.27d | 0% → 100% | 2.4d → none |  | baseline start none → 2021-05-26; baseline finish none → 2021-05-31 |
| 31 | Lógica del módulo de técnicos | 2021-05-20 → 2021-05-26 A (+6d) | 2021-05-20 → 2021-05-26 A (+6d) |  | 0% → 100% | 8.27d → none |  | baseline start none → 2021-05-26; baseline finish none → 2021-05-26 |
| 32 | Lógica del módulo de usuarios | 2021-05-24 → 2021-05-27 A (+3d) | 2021-05-26 → 2021-05-31 A (+5d) |  | 0% → 100% | 1.33d → none |  | baseline start none → 2021-05-27; baseline finish none → 2021-05-31 |
| 33 | Lógica de la página web | 2021-05-26 → 2021-05-28 A (+2d) | 2021-05-28 → 2021-05-31 A (+3d) |  | 0% → 100% | 0d → none |  | baseline start none → 2021-05-28; baseline finish none → 2021-05-31 |
| 34 | **Diseño de bases de datos** | 2021-05-28 → 2021-06-01 A (+4d) | 2021-06-02 → 2021-06-04 A (+2d) |  | 0% → 100% | 6.67d → none |  | baseline start none → 2021-06-01; baseline finish none → 2021-06-04 |
| 35 | Seguridad | 2021-05-28 → 2021-06-01 A (+4d) | 2021-05-31 → 2021-06-02 A (+2d) |  | 0% → 100% | 6.67d → none | 30 → 31, 32, 33 | baseline start none → 2021-06-01; baseline finish none → 2021-06-02 |
| 36 | Diseño de permisos | 2021-05-31 → 2021-06-02 A (+2d) | 2021-06-01 → 2021-06-03 A (+2d) |  | 0% → 100% | 11.2d → none |  | baseline start none → 2021-06-02; baseline finish none → 2021-06-03 |
| 37 | Diseño de datos | 2021-06-01 → 2021-06-03 A (+2d) | 2021-06-02 → 2021-06-04 A (+2d) |  | 0% → 100% | 11.2d → none |  | baseline start none → 2021-06-03; baseline finish none → 2021-06-04 |
| 39 | **Fase de Implementación** | 2021-05-20 → 2021-05-26 A (+6d) | 2021-06-08 → 2021-06-10 A (+2d) | 14.67d → 12.53d | 0% → 100% | 6.4d → none |  | baseline start none → 2021-05-26; baseline finish none → 2021-06-10 |
| 40 | **Módulos** | 2021-06-03 → 2021-06-04 A (+1d) | 2021-06-08 → 2021-06-10 A (+2d) |  | 0% → 100% | 11.2d → none |  | baseline start none → 2021-06-04; baseline finish none → 2021-06-10 |
| 41 | Implementación del módulo de inversores | 2021-06-03 → 2021-06-04 A (+1d) | 2021-06-08 A | 32h → 16h | 0% → 100% | 11.2d → none | 37 → 38 | resources Programadores → Programadores [200%]; baseline start none → 2021-06-04; baseline finish none → 2021-06-08 |
| 42 | Implementación del módulo de gestión | 2021-06-03 → 2021-06-08 A (+5d) | 2021-06-08 → 2021-06-10 A (+2d) | 32h → 16h | 0% → 100% | 11.2d → none | 37 → 41 | resources Programadores → Programadores [200%]; baseline start none → 2021-06-08; baseline finish none → 2021-06-10 |
| 43 | **Implementación de base de datos** | 2021-05-31 → 2021-06-02 A (+2d) | 2021-06-03 → 2021-06-07 A (+4d) |  | 0% → 100% | 6.67d → none |  | baseline start none → 2021-06-02; baseline finish none → 2021-06-07 |
| 44 | Seguridad | 2021-05-31 → 2021-06-02 A (+2d) | 2021-06-02 → 2021-06-04 A (+2d) |  | 0% → 100% | 6.67d → none |  | baseline start none → 2021-06-02; baseline finish none → 2021-06-04 |
| 45 | Implementación de permisos | 2021-06-01 → 2021-06-03 A (+2d) | 2021-06-03 → 2021-06-07 A (+4d) |  | 0% → 100% | 13.33d → none |  | baseline start none → 2021-06-03; baseline finish none → 2021-06-07 |
| 46 | **Implementación de la IU** | 2021-05-20 → 2021-05-26 A (+6d) | 2021-05-31 → 2021-06-02 A (+2d) | 8d → 5.87d | 0% → 100% | 17.87d → none |  | baseline start none → 2021-05-26; baseline finish none → 2021-06-02 |
| 47 | Interfaz de app para técnicos | 2021-05-20 → 2021-05-26 A (+6d) | 2021-05-21 → 2021-05-27 A (+6d) |  | 0% → 100% | 24.53d → none |  | baseline start none → 2021-05-26; baseline finish none → 2021-05-27 |
| 48 | Interfaz de app para clientes | 2021-05-24 → 2021-05-27 A (+3d) | 2021-05-27 → 2021-06-01 A (+5d) |  | 0% → 100% | 20.27d → none |  | baseline start none → 2021-05-27; baseline finish none → 2021-06-01 |
| 49 | Interfaz de página web | 2021-05-26 → 2021-05-28 A (+2d) | 2021-05-31 → 2021-06-02 A (+2d) |  | 0% → 100% | 17.87d → none |  | resources none → Programadores; baseline start none → 2021-05-28; baseline finish none → 2021-06-02 |
| 50 | **Implementación de la arquitectura** | 2021-05-20 → 2021-05-26 A (+6d) | 2021-06-03 → 2021-06-10 A (+7d) | 10.67d → 12d | 0% → 100% | 0d → none |  | baseline start none → 2021-05-26; baseline finish none → 2021-06-10 |
| 51 | Lógica de app para técnicos | 2021-05-20 → 2021-05-26 A (+6d) | 2021-05-24 → 2021-05-28 A (+4d) |  | 0% → 100% | 8.27d → none |  | baseline start none → 2021-05-26; baseline finish none → 2021-05-28 |
| 52 | Lógica de app para clientes | 2021-05-27 → 2021-05-31 A (+4d) | 2021-06-02 → 2021-06-07 A (+5d) |  | 0% → 100% | 1.33d → none |  | baseline start none → 2021-05-31; baseline finish none → 2021-06-07 |
| 53 | Lógica de página web | 2021-05-28 → 2021-06-01 A (+4d) | 2021-06-03 → 2021-06-07 A (+4d) |  | 0% → 100% | 0d → none |  | resources none → Programadores; baseline start none → 2021-06-01; baseline finish none → 2021-06-07 |
| 55 | **Fase de validación y pruebas** | 2021-06-02 → 2021-06-10 A (+8d) | 2021-06-21 → 2021-06-25 A (+4d) | 14.4d → 11.47d | 0% → 100% | 1.33d → none |  | baseline start none → 2021-06-10; baseline finish none → 2021-06-25 |
| 56 | **Casos de prueba** | 2021-06-03 → 2021-06-10 A (+7d) | 2021-06-07 → 2021-06-14 A (+7d) | 1.6d → 2.13d | 0% → 100% | 6.13d → none |  | baseline start none → 2021-06-10; baseline finish none → 2021-06-14 |
| 57 | Diseño de datos de entrada | 2021-06-03 → 2021-06-10 A (+7d) | 2021-06-04 → 2021-06-11 A (+7d) |  | 0% → 100% | 6.13d → none | 50 → 54 | baseline start none → 2021-06-10; baseline finish none → 2021-06-11 |
| 58 | Introducción de datos en la base de datos | 2021-06-03 → 2021-06-11 A (+8d) | 2021-06-04 → 2021-06-11 A (+7d) |  | 0% → 100% | 13.33d → none | 43 → 57 | baseline start none → 2021-06-11; baseline finish none → 2021-06-11 |
| 59 | Validar consistencia de datos | 2021-06-04 → 2021-06-14 A (+10d) | 2021-06-07 → 2021-06-14 A (+7d) |  | 0% → 100% | 13.07d → none |  | baseline start none → 2021-06-14; baseline finish none → 2021-06-14 |
| 60 | **Datos de prueba** | 2021-06-04 → 2021-06-11 A (+7d) | 2021-06-08 → 2021-06-15 A (+7d) |  | 0% → 100% | 6.13d → none |  | baseline start none → 2021-06-11; baseline finish none → 2021-06-15 |
| 61 | Datos de entrada | 2021-06-04 → 2021-06-11 A (+7d) | 2021-06-07 → 2021-06-14 A (+7d) |  | 0% → 100% | 6.13d → none |  | resources Analistas; Programadores_M → Analistas; Programadores_MJ; baseline start none → 2021-06-11; baseline finish none → 2021-06-14 |
| 62 | Datos de salida | 2021-06-07 → 2021-06-14 A (+7d) | 2021-06-08 → 2021-06-15 A (+7d) |  | 0% → 100% | 6.13d → none |  | resources Analistas; Programadores_M → Analistas; Programadores_MJ; baseline start none → 2021-06-14; baseline finish none → 2021-06-15 |
| 63 | **Pruebas unitarias** | 2021-06-02 → 2021-06-10 A (+8d) | 2021-06-16 → 2021-06-21 A (+5d) | 10.4d → 7.47d | 0% → 100% | 0d → none |  | baseline start none → 2021-06-10; baseline finish none → 2021-06-21 |
| 64 | Pruebas de arquitectura | 2021-06-03 → 2021-06-10 A (+7d) | 2021-06-09 → 2021-06-16 A (+7d) |  | 0% → 100% | 0d → none | 50 → 54 | baseline start none → 2021-06-10; baseline finish none → 2021-06-16 |
| 65 | Pruebas de aceptación | 2021-06-09 → 2021-06-11 A (+2d) | 2021-06-11 → 2021-06-16 A (+5d) |  | 0% → 100% | 0d → none | 64 → 64FF | baseline start none → 2021-06-11; baseline finish none → 2021-06-16 |
| 66 | Pruebas de seguridad | 2021-06-02 → 2021-06-16 A (+14d) | 2021-06-07 → 2021-06-21 A (+14d) |  | 0% → 100% | 6.67d → none | 44 → 65 | baseline start none → 2021-06-16; baseline finish none → 2021-06-21 |
| 67 | Pruebas de integración software | 2021-06-11 → 2021-06-17 A (+6d) | 2021-06-16 → 2021-06-21 A (+5d) |  | 0% → 100% | 0d → none | 64, 65 → 66FF | baseline start none → 2021-06-17; baseline finish none → 2021-06-21 |
| 68 | **Tratamiento de errores** | 2021-06-16 → 2021-06-21 A (+5d) | 2021-06-21 → 2021-06-25 A (+4d) |  | 0% → 100% | 0d → none |  | baseline start none → 2021-06-21; baseline finish none → 2021-06-25 |
| 69 | Corrección de errores | 2021-06-16 → 2021-06-21 A (+5d) | 2021-06-21 → 2021-06-24 A (+3d) |  | 0% → 100% | 0d → none | 62, 63 → 62, 67 | baseline start none → 2021-06-21; baseline finish none → 2021-06-24 |
| 70 | Informe de errores | 2021-06-21 → 2021-06-25 A (+4d) | 2021-06-21 → 2021-06-25 A (+4d) |  | 0% → 100% | 0d → none |  | baseline start none → 2021-06-25; baseline finish none → 2021-06-25 |
| 72 | **Fase de Despliegue** | 2021-06-08 → 2021-06-25 A (+17d) | 2021-06-23 → 2021-06-30 A (+7d) | 12.27d → 2.93d | 0% → 100% | 0d → none |  | baseline start none → 2021-06-25; baseline finish none → 2021-06-30 |
| 73 | **Diseño de Descriptores** | 2021-06-22 → 2021-06-25 A (+3d) | 2021-06-22 → 2021-06-28 A (+6d) |  | 0% → 100% | 0d → none |  | baseline start none → 2021-06-25; baseline finish none → 2021-06-28 |
| 74 | Descripción de servicio | 2021-06-22 → 2021-06-25 A (+3d) | 2021-06-22 → 2021-06-28 A (+6d) |  | 0% → 100% | 0.8d → none | 70 → 71 | baseline start none → 2021-06-25; baseline finish none → 2021-06-28 |
| 75 | Analisis de técnicas para el lanzamiento | 2021-06-22 → 2021-06-25 A (+3d) | 2021-06-22 → 2021-06-25 A (+3d) |  | 0% → 100% | 0d → none | 70 → 71 | baseline start none → 2021-06-25; baseline finish none → 2021-06-25 |
| 76 | Descripción de despliege | 2021-06-22 → 2021-06-28 A (+6d) | 2021-06-22 → 2021-06-28 A (+6d) |  | 0% → 100% | 0d → none |  | baseline start none → 2021-06-28; baseline finish none → 2021-06-28 |

| ID | Task | Start | Finish | Duration | Complete | Total float | Predecessors | Other |
| --- | --- | --- | --- | --- | --- | --- | --- | --- |
| 77 | **Formación** | 2021-06-08 → 2021-06-28 A (+20d) | 2021-06-23 → 2021-06-30 A (+7d) | 12.27d → 2.13d | 0% → 100% | 0d → none |  | baseline start none → 2021-06-28; baseline finish none → 2021-06-30 |
| 78 | Redacción de guía para usuarios | 2021-06-08 → 2021-06-28 A (+20d) | 2021-06-08 → 2021-06-28 A (+20d) |  | 0% → 100% | 10.93d → none | 66 → 74 | baseline start none → 2021-06-28; baseline finish none → 2021-06-28 |
| 79 | Redacción de guía para técnicos | 2021-06-08 → 2021-06-28 A (+20d) | 2021-06-08 → 2021-06-29 A (+21d) |  | 0% → 100% | 10.67d → none | 66 → 74 | baseline start none → 2021-06-28; baseline finish none → 2021-06-29 |
| 80 | Impartir cursos para usuarios y técnicos | 2021-06-09 → 2021-06-29 A (+20d) | 2021-06-09 → 2021-06-29 A (+20d) |  | 0% → 100% | 10.67d → none |  | baseline start none → 2021-06-29; baseline finish none → 2021-06-29 |
| 81 | Evaluación del grado de aceptacion del producto | 2021-06-23 → 2021-06-29 A (+6d) | 2021-06-23 → 2021-06-30 A (+7d) |  | 0% → 100% | 0d → none | 76 → 76, 80 | baseline start none → 2021-06-29; baseline finish none → 2021-06-30 |

## Version 6 (saved 2021-05-24, file recursosSeg.mpp)

Note of the change: Año3

Last finish 2021-06-30 → 2021-07-02 (+2d). Complete tasks 59 → 24.

Changed:

| ID | Task | Start | Finish | Duration | Complete | Total float | Other |
| --- | --- | --- | --- | --- | --- | --- | --- |
| 1 | **Game Discovery** |  | 2021-06-30 A → 2021-07-02 (+2d) | 40.8d → 42.93d | 100% → 34% | none → 0d |  |
| 2 | **Fase de Análisis** |  | 2021-05-25 A → 2021-05-25 |  | 100% → 95% | none → 29.33d |  |
| 9 | **Análisis de requisitos** |  | 2021-05-19 A → 2021-05-19 |  | 100% → 90% | none → 34.13d |  |
| 13 | Realización de diagramas de casos de uso |  | 2021-05-19 A → 2021-05-19 |  | 100% → 70% | none → 34.13d |  |
| 15 | **Validación** |  | 2021-05-25 A → 2021-05-25 |  | 100% → 95% | none → 29.33d |  |
| 19 | Definición de la validación de la arquitectura |  | 2021-05-24 A → 2021-05-24 |  | 100% → 70% | none → 30.67d |  |
| 22 | **Fase de Diseño** |  | 2021-06-04 A → 2021-06-04 |  | 100% → 94% | none → 1.6d |  |
| 23 | **Diseño de la IU** |  | 2021-05-28 A → 2021-05-28 |  | 100% → 86% | none → 1.31d |  |
| 26 | Interfaz de la página web |  | 2021-05-28 A → 2021-05-28 |  | 100% → 70% | none → 1.31d |  |
| 30 | **Diseño de la arquitectura** |  | 2021-05-31 A → 2021-05-31 |  | 100% → 90% | none → 5.6d |  |
| 33 | Lógica de la página web |  | 2021-05-31 A → 2021-05-31 |  | 100% → 70% | none → 5.6d |  |
| 39 | **Fase de Implementación** | 2021-05-26 A → 2021-05-26 | 2021-06-10 A → 2021-06-14 (+4d) | 12.53d → 14.67d | 100% → 0% | none → 0d |  |
| 40 | **Módulos** | 2021-06-04 A → 2021-06-04 | 2021-06-10 A → 2021-06-14 (+4d) | 4.27d → 6.4d | 100% → 0% | none → 0d |  |
| 41 | Implementación del módulo de inversores | 2021-06-04 A → 2021-06-04 | 2021-06-08 A → 2021-06-08 |  | 100% → 0% | none → 0d |  |
| 42 | Implementación del módulo de gestión | 2021-06-08 A → 2021-06-08 | 2021-06-10 A → 2021-06-14 (+4d) | 16h → 32h | 100% → 0% | none → 0d | resources Programadores [200%] → Programadores |
| 43 | **Implementación de base de datos** | 2021-06-02 A → 2021-06-02 | 2021-06-07 A → 2021-06-07 |  | 100% → 0% | none → 5.6d |  |
| 44 | Seguridad | 2021-06-02 A → 2021-06-02 | 2021-06-04 A → 2021-06-04 |  | 100% → 0% | none → 6.93d |  |
| 45 | Implementación de permisos | 2021-06-03 A → 2021-06-03 | 2021-06-07 A → 2021-06-07 |  | 100% → 0% | none → 5.6d |  |
| 46 | **Implementación de la IU** | 2021-05-26 A → 2021-05-26 | 2021-06-02 A → 2021-06-02 |  | 100% → 0% | none → 8.8d |  |
| 47 | Interfaz de app para técnicos | 2021-05-26 A → 2021-05-26 | 2021-05-27 A → 2021-05-27 |  | 100% → 0% | none → 13.33d |  |
| 48 | Interfaz de app para clientes | 2021-05-27 A → 2021-05-27 | 2021-06-01 A → 2021-06-01 |  | 100% → 0% | none → 10.13d |  |
| 49 | Interfaz de página web | 2021-05-28 A → 2021-05-28 | 2021-06-02 A → 2021-06-02 |  | 100% → 0% | none → 8.8d |  |
| 50 | **Implementación de la arquitectura** | 2021-05-26 A → 2021-05-26 | 2021-06-10 A → 2021-06-14 (+4d) | 12d → 14.13d | 100% → 0% | none → 0d |  |
| 51 | Lógica de app para técnicos | 2021-05-26 A → 2021-05-26 | 2021-05-28 A → 2021-05-28 |  | 100% → 0% | none → 11.73d |  |
| 52 | Lógica de app para clientes | 2021-05-31 A → 2021-05-31 | 2021-06-07 A → 2021-06-07 |  | 100% → 0% | none → 5.87d |  |
| 53 | Lógica de página web | 2021-06-01 A → 2021-06-01 | 2021-06-07 A → 2021-06-07 |  | 100% → 0% | none → 5.6d |  |
| 54 | Versión preliminar del producto | 2021-06-10 A → 2021-06-14 (+4d) | 2021-06-10 A → 2021-06-14 (+4d) |  | 100% → 0% | none → 0d |  |
| 55 | **Fase de validación y pruebas** | 2021-06-10 A → 2021-06-14 (+4d) | 2021-06-25 A → 2021-06-29 (+4d) |  | 100% → 0% | none → 0d |  |
| 56 | **Casos de prueba** | 2021-06-10 A → 2021-06-14 (+4d) | 2021-06-14 A → 2021-06-16 (+2d) |  | 100% → 0% | none → 4.8d |  |
| 57 | Diseño de datos de entrada | 2021-06-10 A → 2021-06-14 (+4d) | 2021-06-11 A → 2021-06-15 (+4d) |  | 100% → 0% | none → 4.8d |  |
| 58 | Introducción de datos en la base de datos | 2021-06-11 A → 2021-06-15 (+4d) | 2021-06-11 A → 2021-06-15 (+4d) |  | 100% → 0% | none → 12.27d |  |
| 59 | Validar consistencia de datos | 2021-06-14 A → 2021-06-16 (+2d) | 2021-06-14 A → 2021-06-16 (+2d) |  | 100% → 0% | none → 12.27d |  |
| 60 | **Datos de prueba** | 2021-06-11 A → 2021-06-15 (+4d) | 2021-06-15 A → 2021-06-17 (+2d) |  | 100% → 0% | none → 4.53d |  |
| 61 | Datos de entrada | 2021-06-11 A → 2021-06-15 (+4d) | 2021-06-14 A → 2021-06-16 (+2d) |  | 100% → 0% | none → 4.8d |  |
| 62 | Datos de salida | 2021-06-14 A → 2021-06-16 (+2d) | 2021-06-15 A → 2021-06-17 (+2d) |  | 100% → 0% | none → 4.53d |  |
| 63 | **Pruebas unitarias** | 2021-06-10 A → 2021-06-14 (+4d) | 2021-06-21 A → 2021-06-23 (+2d) |  | 100% → 0% | none → 0d |  |
| 64 | Pruebas de arquitectura | 2021-06-10 A → 2021-06-14 (+4d) | 2021-06-16 A → 2021-06-18 (+2d) |  | 100% → 0% | none → 0d |  |
| 65 | Pruebas de aceptación | 2021-06-11 A → 2021-06-15 (+4d) | 2021-06-16 A → 2021-06-18 (+2d) |  | 100% → 0% | none → 0d |  |
| 66 | Pruebas de seguridad | 2021-06-16 A → 2021-06-18 (+2d) | 2021-06-21 A → 2021-06-23 (+2d) |  | 100% → 0% | none → 0d |  |
| 67 | Pruebas de integración software | 2021-06-17 A → 2021-06-21 (+4d) | 2021-06-21 A → 2021-06-23 (+2d) |  | 100% → 0% | none → 0d |  |
| 68 | **Tratamiento de errores** | 2021-06-21 A → 2021-06-23 (+2d) | 2021-06-25 A → 2021-06-29 (+4d) |  | 100% → 0% | none → 0d |  |
| 69 | Corrección de errores | 2021-06-21 A → 2021-06-23 (+2d) | 2021-06-24 A → 2021-06-28 (+4d) |  | 100% → 0% | none → 0d |  |
| 70 | Informe de errores | 2021-06-25 A → 2021-06-29 (+4d) | 2021-06-25 A → 2021-06-29 (+4d) |  | 100% → 0% | none → 0d |  |
| 71 | Testing acabado | 2021-06-25 A → 2021-06-29 (+4d) | 2021-06-25 A → 2021-06-29 (+4d) |  | 100% → 0% | none → 0d |  |
| 72 | **Fase de Despliegue** | 2021-06-25 A → 2021-06-29 (+4d) | 2021-06-30 A → 2021-07-02 (+2d) |  | 100% → 0% | none → 0d |  |
| 73 | **Diseño de Descriptores** | 2021-06-25 A → 2021-06-29 (+4d) | 2021-06-28 A → 2021-06-30 (+2d) |  | 100% → 0% | none → 0d |  |
| 74 | Descripción de servicio | 2021-06-25 A → 2021-06-29 (+4d) | 2021-06-28 A → 2021-06-30 (+2d) |  | 100% → 0% | none → 0d |  |
| 75 | Analisis de técnicas para el lanzamiento | 2021-06-25 A → 2021-06-29 (+4d) | 2021-06-25 A → 2021-06-29 (+4d) |  | 100% → 0% | none → 1.33d |  |
| 76 | Descripción de despliege | 2021-06-28 A → 2021-06-30 (+2d) | 2021-06-28 A → 2021-06-30 (+2d) |  | 100% → 0% | none → 1.33d |  |
| 77 | **Formación** | 2021-06-28 A → 2021-06-30 (+2d) | 2021-06-30 A → 2021-07-02 (+2d) |  | 100% → 0% | none → 0d |  |
| 78 | Redacción de guía para usuarios | 2021-06-28 A → 2021-06-30 (+2d) | 2021-06-28 A → 2021-06-30 (+2d) |  | 100% → 0% | none → 0.27d |  |
| 79 | Redacción de guía para técnicos | 2021-06-28 A → 2021-06-30 (+2d) | 2021-06-29 A → 2021-07-01 (+2d) |  | 100% → 0% | none → 0d |  |
| 80 | Impartir cursos para usuarios y técnicos | 2021-06-29 A → 2021-07-01 (+2d) | 2021-06-29 A → 2021-07-01 (+2d) |  | 100% → 0% | none → 0d |  |
| 81 | Evaluación del grado de aceptacion del producto | 2021-06-29 A → 2021-07-01 (+2d) | 2021-06-30 A → 2021-07-02 (+2d) |  | 100% → 0% | none → 0d |  |
| 82 | Finalización de proyecto | 2021-06-30 A → 2021-07-02 (+2d) | 2021-06-30 A → 2021-07-02 (+2d) |  | 100% → 0% | none → 0d |  |

## Version 7 (saved 2021-05-26, file recursoslb (1).mpp)

Note of the change: Año3

Last finish stays 2021-07-02. Complete tasks 24 → 0.

Changed:

| ID | Task | Start | Finish | Duration | Complete | Total float | Other |
| --- | --- | --- | --- | --- | --- | --- | --- |
| 1 | **Game Discovery** | 2021-05-07 A → 2021-05-07 |  | 42.93d → 43.2d | 34% → 0% |  | resources none → Licencia; baseline finish 2021-06-30 → 2021-07-02 |
| 2 | **Fase de Análisis** | 2021-05-07 A → 2021-05-07 |  |  | 95% → 0% | 29.33d → 0.27d |  |
| 3 | **Declaración de alcance** | 2021-05-07 A → 2021-05-07 | 2021-05-12 A → 2021-05-12 |  | 100% → 0% | none → 0.27d |  |
| 4 | DAFO | 2021-05-07 A → 2021-05-07 | 2021-05-10 A → 2021-05-10 |  | 100% → 0% | none → 0.27d | resources Analistas; Jefe de proyecto → Analistas |
| 5 | Planificación económica | 2021-05-10 A → 2021-05-10 | 2021-05-11 A → 2021-05-11 |  | 100% → 0% | none → 0.27d |  |
| 6 | Priorización de objetivos | 2021-05-11 A → 2021-05-11 | 2021-05-11 A → 2021-05-11 |  | 100% → 0% | none → 0.27d |  |
| 7 | Planificación de tiempos | 2021-05-12 A → 2021-05-12 | 2021-05-12 A → 2021-05-12 |  | 100% → 0% | none → 0.27d |  |
| 8 | Alcance logrado | 2021-05-12 A → 2021-05-12 | 2021-05-12 A → 2021-05-12 |  | 100% → 0% | none → 0.27d |  |
| 9 | **Análisis de requisitos** | 2021-05-12 A → 2021-05-12 |  |  | 90% → 0% | 34.13d → 0.27d |  |
| 10 | Identificación de RF y RNF | 2021-05-12 A → 2021-05-12 | 2021-05-13 A → 2021-05-13 |  | 100% → 0% | none → 0.27d | resources Analistas; Jefe de proyecto → Analistas |
| 11 | Priorización de RF | 2021-05-13 A → 2021-05-13 | 2021-05-14 A → 2021-05-14 |  | 100% → 0% | none → 0.27d |  |
| 12 | Análisis de arquitectura | 2021-05-14 A → 2021-05-14 | 2021-05-17 A → 2021-05-17 |  | 100% → 0% | none → 0.27d |  |
| 13 | Realización de diagramas de casos de uso | 2021-05-17 A → 2021-05-17 |  |  | 70% → 0% | 34.13d → 0.27d | resources Analistas; Jefe de proyecto → Analistas |
| 14 | Requisitos analizados | 2021-05-19 A → 2021-05-19 | 2021-05-19 A → 2021-05-19 |  | 100% → 0% | none → 34.4d |  |
| 15 | **Validación** | 2021-05-14 A → 2021-05-14 |  |  | 95% → 0% | 29.33d → 0.27d |  |
| 16 | Definición de la validación RF | 2021-05-14 A → 2021-05-14 | 2021-05-17 A → 2021-05-17 |  | 100% → 0% | none → 2.13d |  |
| 17 | Definición de la integración | 2021-05-19 A → 2021-05-19 | 2021-05-20 A → 2021-05-20 |  | 100% → 0% | none → 0.27d |  |
| 18 | Definición de medidas de aseguramiento de la calidad | 2021-05-20 A → 2021-05-20 | 2021-05-21 A → 2021-05-21 |  | 100% → 0% | none → 0.27d | resources Analistas; Jefe de proyecto → Analistas |
| 19 | Definición de la validación de la arquitectura | 2021-05-21 A → 2021-05-21 |  |  | 70% → 0% | 30.67d → 0.27d |  |
| 20 | Definición de la migración | 2021-05-24 A → 2021-05-24 | 2021-05-25 A → 2021-05-25 |  | 100% → 0% | none → 0.27d | resources Analistas; Jefe de proyecto → Analistas |
| 21 | Definición del proyecto terminada | 2021-05-25 A → 2021-05-25 | 2021-05-25 A → 2021-05-25 |  | 100% → 0% | none → 0.27d |  |
| 22 | **Fase de Diseño** | 2021-05-25 A → 2021-05-26 (+1d) | 2021-06-04 → 2021-06-14 (+10d) | 8.53d → 14.4d | 94% → 0% | 1.6d → 0d | baseline start 2021-05-25 → 2021-05-26; baseline finish 2021-06-04 → 2021-06-14 |
| 23 | **Diseño de la IU** | 2021-05-25 A → 2021-05-26 (+1d) | 2021-05-28 → 2021-06-01 (+4d) | 2.67d → 4.8d | 86% → 0% | 1.31d → 0d | baseline start 2021-05-25 → 2021-05-26; baseline finish 2021-05-28 → 2021-06-01 |
| 24 | Interfaz de la app de técnicos | 2021-05-25 A → 2021-05-26 (+1d) | 2021-05-25 A → 2021-05-26 (+1d) |  | 100% → 0% | none → 2.13d | baseline start 2021-05-25 → 2021-05-26; baseline finish 2021-05-25 → 2021-05-26 |
| 25 | Interfaz de la app de usuarios | 2021-05-25 A → 2021-05-26 (+1d) | 2021-05-26 A → 2021-05-28 (+2d) |  | 100% → 0% | none → 0d | baseline start 2021-05-25 → 2021-05-26; baseline finish 2021-05-26 → 2021-05-28 |
| 26 | Interfaz de la página web | 2021-05-27 A → 2021-05-28 (+1d) | 2021-05-28 → 2021-06-01 (+4d) |  | 70% → 0% | 1.31d → 0d | baseline start 2021-05-27 → 2021-05-28; baseline finish 2021-05-28 → 2021-06-01 |
| 27 | **Diseño de los módulos** | 2021-05-28 A → 2021-06-02 (+5d) | 2021-06-03 A → 2021-06-14 (+11d) | 4.8d → 9.07d | 100% → 0% | none → 14.93d | baseline start 2021-05-28 → 2021-06-02; baseline finish 2021-06-03 → 2021-06-14 |
| 28 | Diseño del módulo de inversores | 2021-05-28 A → 2021-06-02 (+5d) | 2021-06-01 A → 2021-06-08 (+7d) |  | 100% → 0% | none → 14.93d | baseline start 2021-05-28 → 2021-06-02; baseline finish 2021-06-01 → 2021-06-08 |
| 29 | Diseño del módulo de clientes | 2021-06-01 A → 2021-06-08 (+7d) | 2021-06-03 A → 2021-06-14 (+11d) |  | 100% → 0% | none → 14.93d | baseline start 2021-06-01 → 2021-06-08; baseline finish 2021-06-03 → 2021-06-14 |
| 30 | **Diseño de la arquitectura** | 2021-05-26 A → 2021-05-26 | 2021-05-31 → 2021-06-03 (+3d) | 4.27d → 6.4d | 90% → 0% | 5.6d → 0d | baseline finish 2021-05-31 → 2021-06-03 |
| 31 | Lógica del módulo de técnicos | 2021-05-26 A → 2021-05-26 | 2021-05-26 A → 2021-05-26 |  | 100% → 0% | none → 5.87d |  |
| 32 | Lógica del módulo de usuarios | 2021-05-27 A → 2021-05-28 (+1d) | 2021-05-31 A → 2021-06-01 (+1d) |  | 100% → 0% | none → 1.33d | baseline start 2021-05-27 → 2021-05-28; baseline finish 2021-05-31 → 2021-06-01 |
| 33 | Lógica de la página web | 2021-05-28 A → 2021-06-01 (+4d) | 2021-05-31 → 2021-06-03 (+3d) |  | 70% → 0% | 5.6d → 0d | baseline start 2021-05-28 → 2021-06-01; baseline finish 2021-05-31 → 2021-06-03 |
| 34 | **Diseño de bases de datos** | 2021-06-01 A → 2021-06-03 (+2d) | 2021-06-04 A → 2021-06-08 (+4d) |  | 100% → 0% | none → 0d | baseline start 2021-06-01 → 2021-06-03; baseline finish 2021-06-04 → 2021-06-08 |
| 35 | Seguridad | 2021-06-01 A → 2021-06-03 (+2d) | 2021-06-02 A → 2021-06-04 (+2d) |  | 100% → 0% | none → 0d | baseline start 2021-06-01 → 2021-06-03; baseline finish 2021-06-02 → 2021-06-04 |
| 36 | Diseño de permisos | 2021-06-02 A → 2021-06-04 (+2d) | 2021-06-03 A → 2021-06-07 (+4d) |  | 100% → 0% | none → 0d | baseline start 2021-06-02 → 2021-06-04; baseline finish 2021-06-03 → 2021-06-07 |
| 37 | Diseño de datos | 2021-06-03 A → 2021-06-07 (+4d) | 2021-06-04 A → 2021-06-08 (+4d) |  | 100% → 0% | none → 0d | baseline start 2021-06-03 → 2021-06-07; baseline finish 2021-06-04 → 2021-06-08 |
| 38 | Diseño completado | 2021-06-04 A → 2021-06-08 (+4d) | 2021-06-04 A → 2021-06-08 (+4d) |  | 100% → 0% | none → 0d | baseline start 2021-06-04 → 2021-06-08; baseline finish 2021-06-04 → 2021-06-08 |
| 39 | **Fase de Implementación** |  |  |  |  |  | baseline finish 2021-06-10 → 2021-06-14 |
| 40 | **Módulos** | 2021-06-04 → 2021-06-09 (+5d) |  | 6.4d → 4.27d |  |  | baseline start 2021-06-04 → 2021-06-09; baseline finish 2021-06-10 → 2021-06-14 |
| 41 | Implementación del módulo de inversores | 2021-06-04 → 2021-06-09 (+5d) | 2021-06-08 → 2021-06-10 (+2d) |  |  |  | baseline start 2021-06-04 → 2021-06-09; baseline finish 2021-06-08 → 2021-06-10 |
| 42 | Implementación del módulo de gestión | 2021-06-08 → 2021-06-11 (+3d) |  | 32h → 16h |  |  | resources Programadores → Programadores [200%]; baseline start 2021-06-08 → 2021-06-11; baseline finish 2021-06-10 → 2021-06-14 |
| 43 | **Implementación de base de datos** | 2021-06-02 → 2021-06-04 (+2d) | 2021-06-07 → 2021-06-09 (+2d) |  |  | 5.6d → 3.47d | baseline start 2021-06-02 → 2021-06-04; baseline finish 2021-06-07 → 2021-06-09 |
| 44 | Seguridad | 2021-06-02 → 2021-06-04 (+2d) | 2021-06-04 → 2021-06-08 (+4d) |  |  | 6.93d → 4.8d | baseline start 2021-06-02 → 2021-06-04; baseline finish 2021-06-04 → 2021-06-08 |
| 45 | Implementación de permisos | 2021-06-03 → 2021-06-07 (+4d) | 2021-06-07 → 2021-06-09 (+2d) |  |  | 5.6d → 3.47d | baseline start 2021-06-03 → 2021-06-07; baseline finish 2021-06-07 → 2021-06-09 |
| 46 | **Implementación de la IU** |  | 2021-06-02 → 2021-06-04 (+2d) | 5.87d → 8d |  | 8.8d → 6.67d | baseline finish 2021-06-02 → 2021-06-04 |
| 48 | Interfaz de app para clientes | 2021-05-27 → 2021-05-28 (+1d) | 2021-06-01 → 2021-06-02 (+1d) |  |  | 10.13d → 9.07d | baseline start 2021-05-27 → 2021-05-28; baseline finish 2021-06-01 → 2021-06-02 |
| 49 | Interfaz de página web | 2021-05-28 → 2021-06-01 (+4d) | 2021-06-02 → 2021-06-04 (+2d) |  |  | 8.8d → 6.67d | baseline start 2021-05-28 → 2021-06-01; baseline finish 2021-06-02 → 2021-06-04 |
| 50 | **Implementación de la arquitectura** |  |  |  |  |  | baseline finish 2021-06-10 → 2021-06-14 |
| 52 | Lógica de app para clientes | 2021-05-31 → 2021-06-02 (+2d) | 2021-06-07 → 2021-06-08 (+1d) |  |  | 5.87d → 4.8d | baseline start 2021-05-31 → 2021-06-02; baseline finish 2021-06-07 → 2021-06-08 |
| 53 | Lógica de página web | 2021-06-01 → 2021-06-03 (+2d) | 2021-06-07 → 2021-06-09 (+2d) |  |  | 5.6d → 3.47d | baseline start 2021-06-01 → 2021-06-03; baseline finish 2021-06-07 → 2021-06-09 |
| 54 | Versión preliminar del producto |  |  |  |  |  | baseline start 2021-06-10 → 2021-06-14; baseline finish 2021-06-10 → 2021-06-14 |
| 55 | **Fase de validación y pruebas** | 2021-06-14 → 2021-06-15 (+1d) |  |  |  |  | baseline start 2021-06-10 → 2021-06-15; baseline finish 2021-06-25 → 2021-06-29 |
| 56 | **Casos de prueba** | 2021-06-14 → 2021-06-15 (+1d) | 2021-06-16 → 2021-06-17 (+1d) | 2.13d → 2.93d |  | 4.8d → 4.27d | baseline start 2021-06-10 → 2021-06-15; baseline finish 2021-06-14 → 2021-06-17 |
| 57 | Diseño de datos de entrada | 2021-06-14 → 2021-06-15 (+1d) |  | 6h → 8h |  | 4.8d → 4.27d | baseline start 2021-06-10 → 2021-06-15; baseline finish 2021-06-11 → 2021-06-15 |
| 58 | Introducción de datos en la base de datos | 2021-06-15 → 2021-06-16 (+1d) | 2021-06-15 → 2021-06-16 (+1d) | 4h → 6h |  | 12.27d → 11.47d | baseline start 2021-06-11 → 2021-06-16; baseline finish 2021-06-11 → 2021-06-16 |
| 59 | Validar consistencia de datos |  | 2021-06-16 → 2021-06-17 (+1d) | 6h → 8h |  | 12.27d → 11.47d | baseline start 2021-06-14 → 2021-06-16; baseline finish 2021-06-14 → 2021-06-17 |
| 60 | **Datos de prueba** | 2021-06-15 → 2021-06-16 (+1d) |  | 2.13d → 1.6d |  | 4.53d → 4.27d | baseline start 2021-06-11 → 2021-06-16; baseline finish 2021-06-15 → 2021-06-17 |
| 61 | Datos de entrada | 2021-06-15 → 2021-06-16 (+1d) |  | 8h → 4h |  | 4.8d → 4.27d | baseline start 2021-06-11 → 2021-06-16; baseline finish 2021-06-14 → 2021-06-16 |
| 62 | Datos de salida |  |  |  |  | 4.53d → 4.8d | baseline start 2021-06-14 → 2021-06-16; baseline finish 2021-06-15 → 2021-06-17 |
| 63 | **Pruebas unitarias** | 2021-06-14 → 2021-06-15 (+1d) |  |  |  |  | baseline start 2021-06-10 → 2021-06-15; baseline finish 2021-06-21 → 2021-06-23 |
| 64 | Pruebas de arquitectura | 2021-06-14 → 2021-06-15 (+1d) |  |  |  |  | resources Analistas; Programadores → Analistas; Programadores [200%]; baseline start 2021-06-10 → 2021-06-15; baseline finish 2021-06-16 → 2021-06-18 |
| 65 | Pruebas de aceptación | 2021-06-15 → 2021-06-16 (+1d) |  |  |  |  | baseline start 2021-06-11 → 2021-06-16; baseline finish 2021-06-16 → 2021-06-18 |
| 66 | Pruebas de seguridad |  |  |  |  |  | baseline start 2021-06-16 → 2021-06-18; baseline finish 2021-06-21 → 2021-06-23 |
| 67 | Pruebas de integración software |  |  |  |  |  | baseline start 2021-06-17 → 2021-06-21; baseline finish 2021-06-21 → 2021-06-23 |
| 68 | **Tratamiento de errores** | 2021-06-23 → 2021-06-24 (+1d) |  |  |  |  | baseline start 2021-06-21 → 2021-06-24; baseline finish 2021-06-25 → 2021-06-29 |
| 69 | Corrección de errores | 2021-06-23 → 2021-06-24 (+1d) | 2021-06-28 → 2021-06-29 (+1d) |  |  |  | resources Analistas; Programadores → Analistas; Programadores [200%]; baseline start 2021-06-21 → 2021-06-24; baseline finish 2021-06-24 → 2021-06-29 |
| 70 | Informe de errores |  |  |  |  |  | baseline start 2021-06-25 → 2021-06-29; baseline finish 2021-06-25 → 2021-06-29 |
| 71 | Testing acabado |  |  |  |  |  | baseline start 2021-06-25 → 2021-06-29; baseline finish 2021-06-25 → 2021-06-29 |
| 72 | **Fase de Despliegue** |  |  |  |  |  | resources none → Servidores; baseline start 2021-06-25 → 2021-06-29; baseline finish 2021-06-30 → 2021-07-02 |

| ID | Task | Start | Finish | Other |
| --- | --- | --- | --- | --- |
| 73 | **Diseño de Descriptores** |  |  | baseline start 2021-06-25 → 2021-06-29; baseline finish 2021-06-28 → 2021-06-30 |
| 74 | Descripción de servicio |  |  | baseline start 2021-06-25 → 2021-06-29; baseline finish 2021-06-28 → 2021-06-30 |
| 75 | Analisis de técnicas para el lanzamiento |  | 2021-06-29 → 2021-06-30 (+1d) | baseline start 2021-06-25 → 2021-06-29; baseline finish 2021-06-25 → 2021-06-30 |
| 76 | Descripción de despliege |  |  | baseline start 2021-06-28 → 2021-06-30; baseline finish 2021-06-28 → 2021-06-30 |
| 77 | **Formación** |  |  | baseline start 2021-06-28 → 2021-06-30; baseline finish 2021-06-30 → 2021-07-02 |
| 78 | Redacción de guía para usuarios |  | 2021-06-30 → 2021-07-01 (+1d) | baseline start 2021-06-28 → 2021-06-30; baseline finish 2021-06-28 → 2021-07-01 |
| 79 | Redacción de guía para técnicos |  |  | baseline start 2021-06-28 → 2021-06-30; baseline finish 2021-06-29 → 2021-07-01 |
| 80 | Impartir cursos para usuarios y técnicos |  |  | baseline start 2021-06-29 → 2021-07-01; baseline finish 2021-06-29 → 2021-07-01 |
| 81 | Evaluación del grado de aceptacion del producto | 2021-07-01 → 2021-07-02 (+1d) |  | baseline start 2021-06-29 → 2021-07-02; baseline finish 2021-06-30 → 2021-07-02 |
| 82 | Finalización de proyecto |  |  | baseline start 2021-06-30 → 2021-07-02; baseline finish 2021-06-30 → 2021-07-02 |

## Version 8 (saved 2021-05-26, file recursosSegGraficas (1).mpp)

Note of the change: Año3

Last finish 2021-07-02 → 2021-07-08 (+6d). Complete tasks 0 → 24.

Changed:

| ID | Task | Start | Finish | Duration | Complete | Total float | Other |
| --- | --- | --- | --- | --- | --- | --- | --- |
| 1 | **Game Discovery** | 2021-05-07 A | 2021-07-02 → 2021-07-08 (+6d) | 43.2d → 47.47d | 0% → 32% |  |  |
| 2 | **Fase de Análisis** | 2021-05-07 A |  |  | 0% → 94% | 0.27d → 33.87d |  |
| 3 | **Declaración de alcance** | 2021-05-07 A | 2021-05-12 A |  | 0% → 100% | 0.27d → none |  |
| 4 | DAFO | 2021-05-07 A | 2021-05-10 A |  | 0% → 100% | 0.27d → none |  |
| 5 | Planificación económica | 2021-05-10 A | 2021-05-11 A |  | 0% → 100% | 0.27d → none |  |
| 6 | Priorización de objetivos | 2021-05-11 A | 2021-05-11 A |  | 0% → 100% | 0.27d → none |  |
| 7 | Planificación de tiempos | 2021-05-12 A | 2021-05-12 A |  | 0% → 100% | 0.27d → none |  |
| 8 | Alcance logrado | 2021-05-12 A | 2021-05-12 A |  | 0% → 100% | 0.27d → none |  |
| 9 | **Análisis de requisitos** | 2021-05-12 A |  |  | 0% → 90% | 0.27d → 38.67d |  |
| 10 | Identificación de RF y RNF | 2021-05-12 A | 2021-05-13 A |  | 0% → 100% | 0.27d → none |  |
| 11 | Priorización de RF | 2021-05-13 A | 2021-05-14 A |  | 0% → 100% | 0.27d → none |  |
| 12 | Análisis de arquitectura | 2021-05-14 A | 2021-05-17 A |  | 0% → 100% | 0.27d → none |  |
| 13 | Realización de diagramas de casos de uso | 2021-05-17 A |  |  | 0% → 70% | 0.27d → 38.67d |  |
| 14 | Requisitos analizados | 2021-05-19 A | 2021-05-19 A |  | 0% → 100% | 34.4d → none |  |
| 15 | **Validación** | 2021-05-14 A |  |  | 0% → 93% | 0.27d → 33.87d |  |
| 16 | Definición de la validación RF | 2021-05-14 A | 2021-05-17 A |  | 0% → 100% | 2.13d → none |  |
| 17 | Definición de la integración | 2021-05-19 A | 2021-05-20 A |  | 0% → 100% | 0.27d → none |  |
| 18 | Definición de medidas de aseguramiento de la calidad | 2021-05-20 A |  |  | 0% → 70% | 0.27d → 36.27d |  |
| 19 | Definición de la validación de la arquitectura | 2021-05-21 A | 2021-05-24 A |  | 0% → 100% | 0.27d → none |  |
| 20 | Definición de la migración | 2021-05-24 A | 2021-05-25 A |  | 0% → 100% | 0.27d → none |  |
| 21 | Definición del proyecto terminada | 2021-05-25 A | 2021-05-25 A |  | 0% → 100% | 0.27d → none |  |
| 22 | **Fase de Diseño** | 2021-05-26 A |  |  | 0% → 91% | 0d → 19.2d |  |
| 23 | **Diseño de la IU** | 2021-05-26 A | 2021-06-01 A |  | 0% → 100% | 0d → none |  |
| 24 | Interfaz de la app de técnicos | 2021-05-26 A | 2021-05-26 A |  | 0% → 100% | 2.13d → none |  |
| 25 | Interfaz de la app de usuarios | 2021-05-26 A | 2021-05-28 A |  | 0% → 100% | 0d → none |  |
| 26 | Interfaz de la página web | 2021-05-28 A | 2021-06-01 A |  | 0% → 100% | 0d → none |  |
| 27 | **Diseño de los módulos** | 2021-06-02 A |  |  | 0% → 85% | 14.93d → 19.2d |  |
| 28 | Diseño del módulo de inversores | 2021-06-02 A |  |  | 0% → 70% | 14.93d → 23.73d |  |
| 29 | Diseño del módulo de clientes | 2021-06-08 A | 2021-06-14 A |  | 0% → 100% | 14.93d → none |  |
| 30 | **Diseño de la arquitectura** | 2021-05-26 A |  |  | 0% → 84% | 0d → 7.73d |  |
| 31 | Lógica del módulo de técnicos | 2021-05-26 A | 2021-05-26 A |  | 0% → 100% | 5.87d → none |  |
| 32 | Lógica del módulo de usuarios | 2021-05-28 A |  |  | 0% → 70% | 1.33d → 9.07d |  |
| 33 | Lógica de la página web | 2021-06-01 A | 2021-06-03 A |  | 0% → 100% | 0d → none |  |
| 34 | **Diseño de bases de datos** | 2021-06-03 A | 2021-06-08 A |  | 0% → 100% | 0d → none |  |
| 35 | Seguridad | 2021-06-03 A | 2021-06-04 A |  | 0% → 100% | 0d → none |  |
| 36 | Diseño de permisos | 2021-06-04 A | 2021-06-07 A |  | 0% → 100% | 0d → none |  |
| 37 | Diseño de datos | 2021-06-07 A | 2021-06-08 A |  | 0% → 100% | 0d → none |  |
| 38 | Diseño completado | 2021-06-08 A | 2021-06-08 A |  | 0% → 100% | 0d → none |  |
| 39 | **Fase de Implementación** |  | 2021-06-14 → 2021-06-18 (+4d) | 14.67d → 18.93d |  |  |  |
| 40 | **Módulos** |  | 2021-06-14 → 2021-06-18 (+4d) | 4.27d → 8.53d |  |  |  |
| 41 | Implementación del módulo de inversores |  | 2021-06-10 → 2021-06-14 (+4d) | 16h → 32h |  |  | resources Programadores [200%] → Programadores |
| 42 | Implementación del módulo de gestión | 2021-06-11 → 2021-06-15 (+4d) | 2021-06-14 → 2021-06-18 (+4d) | 16h → 32h |  |  | resources Programadores [200%] → Programadores |
| 50 | **Implementación de la arquitectura** |  | 2021-06-14 → 2021-06-18 (+4d) | 14.13d → 18.4d |  |  |  |
| 54 | Versión preliminar del producto | 2021-06-14 → 2021-06-18 (+4d) | 2021-06-14 → 2021-06-18 (+4d) |  |  |  |  |
| 55 | **Fase de validación y pruebas** | 2021-06-15 → 2021-06-21 (+6d) | 2021-06-29 → 2021-07-05 (+6d) |  |  |  |  |
| 56 | **Casos de prueba** | 2021-06-15 → 2021-06-21 (+6d) | 2021-06-17 → 2021-06-23 (+6d) |  |  |  |  |
| 57 | Diseño de datos de entrada | 2021-06-15 → 2021-06-21 (+6d) | 2021-06-15 → 2021-06-21 (+6d) |  |  |  |  |
| 58 | Introducción de datos en la base de datos | 2021-06-16 → 2021-06-22 (+6d) | 2021-06-16 → 2021-06-22 (+6d) |  |  |  |  |
| 59 | Validar consistencia de datos | 2021-06-16 → 2021-06-22 (+6d) | 2021-06-17 → 2021-06-23 (+6d) |  |  |  |  |
| 60 | **Datos de prueba** | 2021-06-16 → 2021-06-22 (+6d) | 2021-06-17 → 2021-06-23 (+6d) |  |  |  |  |
| 61 | Datos de entrada | 2021-06-16 → 2021-06-22 (+6d) | 2021-06-16 → 2021-06-22 (+6d) |  |  |  |  |
| 62 | Datos de salida | 2021-06-16 → 2021-06-22 (+6d) | 2021-06-17 → 2021-06-23 (+6d) |  |  |  |  |
| 63 | **Pruebas unitarias** | 2021-06-15 → 2021-06-21 (+6d) | 2021-06-23 → 2021-06-29 (+6d) |  |  |  |  |
| 64 | Pruebas de arquitectura | 2021-06-15 → 2021-06-21 (+6d) | 2021-06-18 → 2021-06-24 (+6d) |  |  |  |  |
| 65 | Pruebas de aceptación | 2021-06-16 → 2021-06-22 (+6d) | 2021-06-18 → 2021-06-24 (+6d) |  |  |  |  |
| 66 | Pruebas de seguridad | 2021-06-18 → 2021-06-24 (+6d) | 2021-06-23 → 2021-06-29 (+6d) |  |  |  |  |
| 67 | Pruebas de integración software | 2021-06-21 → 2021-06-25 (+4d) | 2021-06-23 → 2021-06-29 (+6d) |  |  |  |  |
| 68 | **Tratamiento de errores** | 2021-06-24 → 2021-06-30 (+6d) | 2021-06-29 → 2021-07-05 (+6d) |  |  |  |  |
| 69 | Corrección de errores | 2021-06-24 → 2021-06-30 (+6d) | 2021-06-29 → 2021-07-05 (+6d) |  |  |  |  |
| 70 | Informe de errores | 2021-06-29 → 2021-07-05 (+6d) | 2021-06-29 → 2021-07-05 (+6d) |  |  |  |  |
| 71 | Testing acabado | 2021-06-29 → 2021-07-05 (+6d) | 2021-06-29 → 2021-07-05 (+6d) |  |  |  |  |
| 72 | **Fase de Despliegue** | 2021-06-29 → 2021-07-05 (+6d) | 2021-07-02 → 2021-07-08 (+6d) |  |  |  |  |
| 73 | **Diseño de Descriptores** | 2021-06-29 → 2021-07-05 (+6d) | 2021-06-30 → 2021-07-06 (+6d) |  |  |  |  |
| 74 | Descripción de servicio | 2021-06-29 → 2021-07-05 (+6d) | 2021-06-30 → 2021-07-06 (+6d) |  |  |  |  |
| 75 | Analisis de técnicas para el lanzamiento | 2021-06-29 → 2021-07-05 (+6d) | 2021-06-30 → 2021-07-06 (+6d) |  |  |  |  |
| 76 | Descripción de despliege | 2021-06-30 → 2021-07-06 (+6d) | 2021-06-30 → 2021-07-06 (+6d) |  |  |  |  |
| 77 | **Formación** | 2021-06-30 → 2021-07-06 (+6d) | 2021-07-02 → 2021-07-08 (+6d) |  |  |  |  |
| 78 | Redacción de guía para usuarios | 2021-06-30 → 2021-07-06 (+6d) | 2021-07-01 → 2021-07-07 (+6d) |  |  |  |  |
| 79 | Redacción de guía para técnicos | 2021-06-30 → 2021-07-06 (+6d) | 2021-07-01 → 2021-07-07 (+6d) |  |  |  |  |
| 80 | Impartir cursos para usuarios y técnicos | 2021-07-01 → 2021-07-07 (+6d) | 2021-07-01 → 2021-07-07 (+6d) |  |  |  |  |

| ID | Task | Start | Finish |
| --- | --- | --- | --- |
| 81 | Evaluación del grado de aceptacion del producto | 2021-07-02 → 2021-07-08 (+6d) | 2021-07-02 → 2021-07-08 (+6d) |
| 82 | Finalización de proyecto | 2021-07-02 → 2021-07-08 (+6d) | 2021-07-02 → 2021-07-08 (+6d) |
